# Yanbal PhoneGap - Web

How a schedule from MS Project changed from version to version. A marks actual dates.

## Version 1 (data date 2008-01-09, saved 2015-04-17, file Yanbal - Kiosko V2 - 20150416.mpp)

| ID | WBS | Task | Duration | Start | Finish | Predecessors | Complete | Total float |
| --- | --- | --- | --- | --- | --- | --- | --- | --- |
| 1 |  | Gestión del Proyecto | 69d | 2015-04-14 A | 2015-07-21 |  | 4% | 0d |
| 2 |  | Sesión de Inicio de Proyecto (KickOff) | 4h | 2015-04-14 A | 2015-04-14 A |  | 100% |  |
| 3 | 3 | **Análisis** | 6.75d | 2015-04-14 A | 2015-04-23 | 2 | 37% | 0.25d |
| 4 |  | Reuniones | 2d | 2015-04-14 A | 2015-04-16 |  | 75% | 1.38d |
| 5 |  | Especificación de requerimientos funcionales | 0.5d | 2015-04-16 A | 2015-04-16 | 4 | 50% | 1.12d |
| 6 |  | Creación de Wireframes | 2d | 2015-04-17 A | 2015-04-20 | 5 | 31% | 0.5d |
| 7 |  | Especificación de casos de uso | 2d | 2015-04-21 A | 2015-04-22 | 6 | 6% | 0.25d |
| 8 |  | Matriz de trazabilidad: requerimientos / casos de uso | 0.25d | 2015-04-23 | 2015-04-23 | 7 |  | 0.25d |
| 9 | 4 | **Diseño Técnico** | 8d | 2015-04-23 | 2015-05-06 | 3 |  | 0.25d |
| 10 |  | Reuniones | 1d | 2015-04-23 | 2015-04-24 |  |  | 0.25d |
| 11 |  | Definir estándares de desarrollo | 0.5d | 2015-04-24 | 2015-04-24 | 10 |  | 0.25d |
| 12 |  | Requerimientos no funcionales | 0.5d | 2015-04-24 | 2015-04-27 | 11 |  | 0.25d |
| 13 |  | Diagrama de Componentes | 0.25d | 2015-04-27 | 2015-04-27 | 12 |  | 0.25d |
| 14 |  | Diagrama de Paquetes | 0.5d | 2015-04-27 | 2015-04-27 | 13 |  | 0.25d |
| 15 |  | Diagrama de Despliegue | 0.25d | 2015-04-28 | 2015-04-28 | 14 |  | 0.25d |
| 16 |  | Diagrama de Clases | 2d | 2015-04-28 | 2015-04-30 | 15 |  | 0.25d |
| 17 |  | Diseño de base de datos | 1d | 2015-04-30 | 2015-05-04 | 16 |  | 0.25d |
| 18 |  | Catalogo de servicios web a crear / consumir | 2d | 2015-05-04 | 2015-05-06 | 17 |  | 0.25d |
| 19 | 5 | **Diseño Gráfico** | 18.25d | 2015-04-21 | 2015-05-18 | 6 |  | 18.75d |
| 20 | 5.1 | **Preparación de propuesta** | 7.25d | 2015-04-21 | 2015-04-30 |  |  | 18.75d |
| 21 |  | Reuniones con el cliente (información inicial) | 0.75d | 2015-04-21 | 2015-04-21 |  |  | 18.75d |
| 22 |  | Elaboración de propuesta grafica (2 Pág. Maestras) Móvil | 2.5d | 2015-04-21 | 2015-04-24 | 21 |  | 18.75d |
| 23 |  | Elaboración de propuesta grafica (2 Pág. Maestras) Web | 2.25d | 2015-04-24 | 2015-04-28 | 22 |  | 18.75d |
| 24 |  | Elaboración de assets y cortes de imágenes | 1.75d | 2015-04-28 | 2015-04-30 | 23 |  | 18.75d |
| 25 | 5.2 | **Preparación de maquetas y assets** | 11d | 2015-04-30 | 2015-05-18 | 20 |  | 45.75d |
| 26 | 5.2.1 | **BackOffice Administrador (Web)** | 8d | 2015-04-30 | 2015-05-13 |  |  | 45.75d |
| 27 |  | UI Login | 1d | 2015-04-30 | 2015-05-04 |  |  | 45.75d |
| 28 |  | UI - Mantenimiento de usuarios | 1d | 2015-05-04 | 2015-05-05 | 27 |  | 45.75d |
| 29 |  | UI - Mantenimiento de roles | 1d | 2015-05-05 | 2015-05-06 | 28 |  | 45.75d |
| 30 |  | Crear grupos de usuarios | 1d | 2015-05-06 | 2015-05-07 | 29 |  | 45.75d |
| 31 |  | Asociar grupos a perfiles | 1d | 2015-05-07 | 2015-05-08 | 30 |  | 45.75d |
| 32 |  | Administración de Colecciones | 0.75d | 2015-05-08 | 2015-05-08 | 31 |  | 45.75d |
| 33 |  | Administraciòn de documentos | 0.75d | 2015-05-11 | 2015-05-11 | 32 |  | 45.75d |
| 34 |  | Administrar contenido por perfil | 0.75d | 2015-05-11 | 2015-05-12 | 33 |  | 45.75d |
| 35 |  | Publicar contenido por perfil | 0.75d | 2015-05-12 | 2015-05-13 | 34 |  | 45.75d |
| 36 | 5.2.2 | **Frontoffice (App Mobile)** | 3d | 2015-05-13 | 2015-05-18 | 26 |  | 45.75d |
| 37 |  | Login | 0.75d | 2015-05-13 | 2015-05-13 |  |  | 45.75d |
| 38 |  | Lista contenido | 0.75d | 2015-05-14 | 2015-05-14 | 37 |  | 45.75d |
| 39 |  | Ver agrupaciones | 0.75d | 2015-05-14 | 2015-05-15 | 38 |  | 45.75d |
| 40 |  | Notificaciones | 0.75d | 2015-05-15 | 2015-05-18 | 39 |  | 45.75d |
| 41 | 6 | **Desarrollo** | 40.5d? | 2015-05-06 | 2015-07-02 | 9 |  | 0.25d |
| 42 | 6.1 | **Configuración del Ambiente de Trabajo** | 1.5d | 2015-05-06 | 2015-05-07 |  |  | 0.25d |
| 43 |  | Configurar ambientes de desarrollo (personal y virtual) | 1d | 2015-05-06 | 2015-05-07 |  |  | 0.25d |
| 44 |  | Configurar integración continua | 0.5d | 2015-05-07 | 2015-05-07 | 43 |  | 0.25d |
| 45 | 6.2 | **Web Services** | 24d? | 2015-05-07 | 2015-06-10 | 42 |  | 0.25d |
| 46 |  | Reuniones | 2d? | 2015-05-07 | 2015-05-11 |  |  | 0.25d |
| 47 |  | Creación servicio web y estructura base | 2d | 2015-05-11 | 2015-05-13 | 46 |  | 0.25d |
| 48 |  | Implementación log (bitácora) | 3d | 2015-05-13 | 2015-05-18 | 47 |  | 0.25d |
| 49 |  | Implementación utilitarios base (parseo, conversión) | 2d | 2015-05-18 | 2015-05-20 | 48 |  | 0.25d |
| 50 |  | Integración YANBAL - Active Directory | 2d? | 2015-05-20 | 2015-05-22 | 49 |  | 0.25d |
| 51 |  | Autenticacion / login | 1d | 2015-05-22 | 2015-05-25 | 50 |  | 0.25d |
| 52 |  | Descargar contenido (PDF,Imagenes,Video,Audio) | 1d | 2015-05-25 | 2015-05-26 | 51 |  | 0.25d |
| 53 |  | Listar documentos descargados | 0.75d | 2015-05-26 | 2015-05-27 | 52 |  | 0.25d |
| 54 |  | Eliminar documentos | 0.75d | 2015-05-27 | 2015-05-28 | 53 |  | 0.25d |
| 55 |  | Insertar Metricas Usabilidad | 2d | 2015-05-28 | 2015-06-01 | 54 |  | 0.25d |
| 56 |  | CRUD Usuarios | 1d | 2015-06-01 | 2015-06-02 | 55 |  | 0.25d |
| 57 |  | CRUD Roles | 1d | 2015-06-02 | 2015-06-03 | 56 |  | 0.25d |
| 58 |  | CRUD agrupaciones | 1d | 2015-06-03 | 2015-06-04 | 57 |  | 0.25d |
| 59 |  | CRUD Contenidos | 2d | 2015-06-04 | 2015-06-08 | 58 |  | 0.25d |
| 60 |  | Administrar parametros | 0.5d | 2015-06-08 | 2015-06-08 | 59 |  | 0.25d |
| 61 |  | Actualización de servicios | 1d? | 2015-06-08 | 2015-06-09 | 60 |  | 0.25d |
| 62 |  | Actualizar documentación de servicios | 1d? | 2015-06-09 | 2015-06-10 | 61 |  | 0.25d |
| 63 | 6.3 | **HTML** | 4d? | 2015-05-07 | 2015-05-13 | 20, 42 |  | 14.25d |
| 64 |  | Portal Web | 2d? | 2015-05-07 | 2015-05-11 |  |  | 14.25d |
| 65 |  | PhoneGap App | 2d? | 2015-05-11 | 2015-05-13 | 64 |  | 14.25d |
| 66 | 6.4 | **Portal Web** | 15d? | 2015-06-10 | 2015-07-02 | 45, 63 |  | 0.25d |
| 67 |  | Aplicación y pruebas de estilo base | 1d | 2015-06-10 | 2015-06-11 |  |  | 0.25d |
| 68 |  | UI Login | 0.5d | 2015-06-11 | 2015-06-12 | 67 |  | 0.25d |
| 69 |  | UI - Mantenimiento de usuarios | 1d | 2015-06-12 | 2015-06-15 | 68 |  | 0.25d |
| 70 |  | UI - Mantenimiento de roles | 1d | 2015-06-15 | 2015-06-16 | 69 |  | 0.25d |

| ID | WBS | Task | Duration | Start | Finish | Predecessors | Total float |
| --- | --- | --- | --- | --- | --- | --- | --- |
| 71 |  | Crear grupos de usuarios | 2d | 2015-06-16 | 2015-06-18 | 70 | 0.25d |
| 72 |  | Asociar grupos a perfiles | 1d | 2015-06-18 | 2015-06-19 | 71 | 0.25d |
| 73 | 6.4.7 | **Administración de Colecciones** | 2d | 2015-06-19 | 2015-06-23 | 72 | 0.25d |
| 74 |  | Crear colección | 0.5d | 2015-06-19 | 2015-06-19 |  | 0.25d |
| 75 |  | Editar colección | 0.5d | 2015-06-19 | 2015-06-22 | 74 | 0.25d |
| 76 |  | Eliminar colección | 0.5d | 2015-06-22 | 2015-06-22 | 75 | 0.25d |
| 77 |  | Mover colección | 0.5d | 2015-06-22 | 2015-06-23 | 76 | 0.25d |
| 78 | 6.4.8 | **Administraciòn de documentos** | 2.5d? | 2015-06-23 | 2015-06-25 | 77 | 0.25d |
| 79 |  | Agrerar documento | 1d? | 2015-06-23 | 2015-06-24 |  | 0.25d |
| 80 |  | Editar atributos del documento | 0.5d? | 2015-06-24 | 2015-06-24 | 79 | 0.25d |
| 81 |  | Eliminar documento | 0.5d? | 2015-06-24 | 2015-06-25 | 80 | 0.25d |
| 82 |  | Mover documento | 0.5d? | 2015-06-25 | 2015-06-25 | 81 | 0.25d |
| 83 | 6.4.9 | **Perfiles** | 4d | 2015-06-25 | 2015-07-02 | 78 | 0.25d |
| 84 |  | Administrar contenido por perfil | 2d | 2015-06-25 | 2015-06-30 |  | 0.25d |
| 85 |  | Publicar contenido por perfil | 2d | 2015-06-30 | 2015-07-02 | 84 | 0.25d |
| 86 | 6.5 | **PhoneGap** | 21.5d? | 2015-05-13 | 2015-06-12 | 63 | 14.25d |
| 87 |  | Listener para eventos Back | 0.5d? | 2015-05-13 | 2015-05-14 |  | 14.25d |
| 88 | 6.5.2 | **Login** | 3.5d? | 2015-05-14 | 2015-05-19 | 87 | 14.25d |
| 89 |  | UI | 0.75d? | 2015-05-14 | 2015-05-14 |  | 14.25d |
| 90 |  | Servicios | 0.75d? | 2015-05-15 | 2015-05-15 | 89 | 14.25d |
| 91 |  | Manejo de accesos y permisos | 2d? | 2015-05-15 | 2015-05-19 | 90 | 14.25d |
| 92 | 6.5.3 | **Documentos** | 6.25d? | 2015-05-19 | 2015-05-27 | 88 | 14.25d |
| 93 |  | Visualizar lista de documentos | 0.75d? | 2015-05-19 | 2015-05-20 |  | 14.25d |
| 94 |  | Descargar documentos | 1.75d? | 2015-05-20 | 2015-05-22 | 93 | 14.25d |
| 95 |  | Llamada a visor - Android | 1d? | 2015-05-22 | 2015-05-25 | 94 | 14.25d |
| 96 |  | Visualizar documentos - iOS | 0.5d? | 2015-05-25 | 2015-05-25 | 95 | 14.25d |
| 97 |  | Visualizar documentos - Windows Phone | 0.5d? | 2015-05-25 | 2015-05-26 | 96 | 14.25d |
| 98 |  | Eliminar un documento | 0.75d? | 2015-05-26 | 2015-05-26 | 97 | 14.25d |
| 99 |  | Editar atributos | 1d? | 2015-05-27 | 2015-05-27 | 98 | 14.25d |
| 100 | 6.5.4 | **Agrupaciones** | 3d? | 2015-05-28 | 2015-06-01 | 92 | 14.25d |
| 101 |  | Ver agrupaciones | 1.5d? | 2015-05-28 | 2015-05-29 |  | 14.25d |
| 102 |  | Servicios | 1.5d? | 2015-05-29 | 2015-06-01 | 101 | 14.25d |
| 103 | 6.5.5 | **Notificaciones** | 5.25d? | 2015-06-02 | 2015-06-09 | 100 | 14.25d |
| 104 |  | Desplegar notificación genérica - Android | 1d? | 2015-06-02 | 2015-06-02 |  | 14.25d |
| 105 |  | Desplegar notificación genérica - iOS | 1d? | 2015-06-03 | 2015-06-03 | 104 | 14.25d |
| 106 |  | Desplegar notificación genérica - Windows Phone | 1d? | 2015-06-04 | 2015-06-04 | 105 | 14.25d |
| 107 |  | Desplegar notificación con redirección a documentos - Android | 0.75d? | 2015-06-05 | 2015-06-05 | 106 | 14.25d |
| 108 |  | Desplegar notificación con redirección a documentos - iOS | 0.75d? | 2015-06-05 | 2015-06-08 | 107 | 14.25d |
| 109 |  | Desplegar notificación con redirección a documentos - Windows Phone | 0.75d? | 2015-06-08 | 2015-06-09 | 108 | 14.25d |
| 110 |  | Integración con Google Analytics | 2d? | 2015-06-09 | 2015-06-11 | 103 | 14.25d |
| 111 |  | Sincronización a demanda del usuario | 1d? | 2015-06-11 | 2015-06-12 | 110 | 14.25d |
| 112 | 6.6 | **Revisión de Pares PhoneGap** | 1d | 2015-06-12 | 2015-06-15 | 86 | 14.25d |
| 113 |  | Soporte Ejecución Revisión de Pares | 0.25d | 2015-06-12 | 2015-06-12 |  | 14.25d |
| 114 |  | Correcciones Revisión de Pares | 0.75d | 2015-06-12 | 2015-06-15 | 113 | 14.25d |
| 115 | 7 | **Aseguramiento de la Calidad** | 27d? | 2015-06-08 | 2015-07-16 | 3 | 0.25d |
| 116 |  | Plan de Pruebas (Funcionales y Rendimiento) | 2d | 2015-06-08 | 2015-06-10 | 117SF | 25.25d |
| 117 |  | Configuración Ambientes de QA | 1d | 2015-06-10 | 2015-06-11 | 118SF | 24.25d |
| 118 | 7.3 | **PhoneGap** | 10d? | 2015-06-11 | 2015-06-25 |  | 14.25d |
| 119 |  | Estimación y Creación de Casos de Prueba | 2d? | 2015-06-11 | 2015-06-15 | 120SF | 22.25d |
| 120 | 7.3.2 | **Ejecución en Tablet** | 7d? | 2015-06-15 | 2015-06-24 | 112 | 15.25d |
| 121 |  | Ejecución en Samsung de 10.1" /SO Android 4.1.2 (Principal) | 3.25d? | 2015-06-15 | 2015-06-18 |  | 15.25d |
| 122 |  | Ejecución en Lenovo 7" / SO Android 4.2.2 (Secundario) | 0.94d? | 2015-06-18 | 2015-06-19 | 121 | 15.25d |
| 123 |  | Tablet AOC / SO: Android 4.1.1 (Secundario) | 0.94d? | 2015-06-19 | 2015-06-22 | 122 | 15.25d |
| 124 |  | Ejecución en Ipad SO 7 (Secundario) | 0.94d? | 2015-06-22 | 2015-06-23 | 123 | 15.25d |
| 125 |  | Ejecución en Ipad SO 8 (Secundario) | 0.94d? | 2015-06-23 | 2015-06-24 | 124 | 15.25d |
| 126 | 7.3.3 | **Ejecución en SmartPhone** | 8d? | 2015-06-15 | 2015-06-25 | 112 | 14.25d |
| 127 |  | Nokia Lumia 520 / SO: Windows Phone 8.0 (Principal) | 3.31d? | 2015-06-15 | 2015-06-18 |  | 14.25d |
| 128 |  | Ejecución en Samsung Galaxy Chat/SO -SO Android 4.1.2 (secundario) | 0.94d? | 2015-06-18 | 2015-06-19 | 127 | 14.25d |
| 129 |  | Samsung Galaxy S III Mini / SO: Android 4.1.2 (Principal) | 0.94d? | 2015-06-19 | 2015-06-22 | 128 | 14.25d |
| 130 |  | Ejecución en Iphone 4 / iSO 7 (Principal) | 0.94d? | 2015-06-22 | 2015-06-23 | 129 | 14.25d |
| 131 |  | Ejecución en Iphone 5 / iSO 7 (Secundario) | 0.94d? | 2015-06-23 | 2015-06-24 | 130 | 14.25d |
| 132 |  | Ejecución en Iphone 6 / iSO 7 (Secundario) | 0.94d? | 2015-06-24 | 2015-06-25 | 131 | 14.25d |
| 133 | 7.4 | **Portal Web** | 7d? | 2015-06-30 | 2015-07-09 |  | 0.25d |
| 134 |  | Estimación y Creación de Casos de Prueba | 2d | 2015-06-30 | 2015-07-02 | 135SF | 5.25d |
| 135 | 7.4.2 | **Ejecución en Web Browser - IE9 (Principal)** | 3.75d? | 2015-07-02 | 2015-07-08 | 66 | 0.25d |
| 136 |  | Ejecución de casos de prueba funcionales | 2.25d? | 2015-07-02 | 2015-07-06 |  | 0.25d |
| 137 |  | Reporte de errores | 0.5d? | 2015-07-07 | 2015-07-07 | 136 | 0.25d |
| 138 |  | Verificación de errores | 0.5d? | 2015-07-07 | 2015-07-07 | 137 | 0.25d |
| 139 |  | Pruebas exploratoria | 0.5d? | 2015-07-08 | 2015-07-08 | 138 | 0.25d |
| 140 |  | Ejecución en Web Browser - Chrome 40 (Secundario) | 1.25d? | 2015-07-08 | 2015-07-09 | 135 | 0.25d |

| ID | WBS | Task | Duration | Start | Finish | Predecessors | Total float |
| --- | --- | --- | --- | --- | --- | --- | --- |
| 141 | 7.5 | **Soporte a Pruebas Funcionales** | 17.5d | 2015-06-15 | 2015-07-09 |  | 4.25d |
| 142 | 7.5.1 | **PhoneGap** | 10d | 2015-06-15 | 2015-06-30 |  | 11.75d |
| 143 |  | Resolución Bugs | 10d | 2015-06-15 | 2015-06-30 | 120SS | 11.75d |
| 144 | 7.5.2 | **Portal Web** | 5d | 2015-07-02 | 2015-07-09 |  | 4.25d |
| 145 |  | Resolución Bugs | 5d | 2015-07-02 | 2015-07-09 | 135SS | 4.25d |
| 146 | 7.6 | **Pruebas de Rendimiento** | 9d? | 2015-07-03 | 2015-07-16 |  | 0.25d |
| 147 |  | Creación de Scripts (Flujo: 6WS) | 4.5d? | 2015-07-03 | 2015-07-09 | 148SF | 4.75d |
| 148 | 7.6.2 | **Ejecución de Pruebas** | 3d | 2015-07-09 | 2015-07-14 | 133 | 0.25d |
| 149 |  | Preparación del Ambiente | 1d | 2015-07-09 | 2015-07-10 |  | 0.25d |
| 150 |  | Prueba de Ambiente | 0.5d | 2015-07-10 | 2015-07-13 | 149 | 0.25d |
| 151 |  | Ejecución prueba de carga | 1.5d | 2015-07-13 | 2015-07-14 | 150 | 0.25d |
| 152 | 7.6.3 | **Documentación** | 1.5d | 2015-07-14 | 2015-07-16 | 148 | 0.25d |
| 153 |  | Parsing Logs | 0.5d | 2015-07-14 | 2015-07-15 |  | 0.25d |
| 154 |  | Análisis y Notas Iniciales | 0.5d | 2015-07-15 | 2015-07-15 | 153 | 0.25d |
| 155 |  | Creación de documento de resultados | 0.5d | 2015-07-15 | 2015-07-16 | 154 | 0.25d |
| 156 | 8 | **Documentación** | 4d | 2015-07-09 | 2015-07-15 | 141 | 4.25d |
| 157 |  | Manual de instalación | 2d | 2015-07-09 | 2015-07-13 |  | 4.25d |
| 158 |  | Manual de usuario | 2d | 2015-07-13 | 2015-07-15 | 157 | 4.25d |
| 159 | 9 | **Generación de Binarios** | 0.5d | 2015-07-16 | 2015-07-16 | 115 | 0.25d |
| 160 |  | Portal Web / Web Services | 0.25d | 2015-07-16 | 2015-07-16 |  | 0.5d |
| 161 |  | Aplicaciones Moviles (iOS, Android, Windows Phone) | 0.5d | 2015-07-16 | 2015-07-16 |  | 0.25d |
| 162 | 10 | **Despliegue** | 3d | 2015-07-16 | 2015-07-21 | 159 | 0.25d |
| 163 |  | Publicacion / Ejecución despliegue en Ambiente UAT YANBAL | 2d | 2015-07-16 | 2015-07-20 |  | 0.25d |
| 164 |  | Publicación / Ejecución despliegue en Ambiente Producción YANBAL | 1d | 2015-07-20 | 2015-07-21 | 163 | 0.25d |

## Version 2 (data date 2008-01-09, saved 2015-04-29, file Yanbal - Kiosko V2 - 20150423.mpp)

Last finish 2015-07-21 → 2015-07-24 (+3d). Complete tasks 1 → 6.

Added:

| ID | Task | Duration | Start | Finish | Predecessors | Constraint | Resources |
| --- | --- | --- | --- | --- | --- | --- | --- |
| 9 | Aprobación Yanbal | 2d? | 2015-04-23 | 2015-04-27 | 8 |  | Yanbal |
| 10 | Modificación de documentos | 0.5d? | 2015-04-27 | 2015-04-27 | 9 |  | SEII - Mobile; SEII - Web |
| 21 | Aprobación Yanbal | 2d? | 2015-05-06 | 2015-05-08 | 20 |  | Yanbal |
| 22 | Modificación de documentos | 2d? | 2015-05-08 | 2015-05-12 | 21 |  | SEII - Mobile; SEII - Web |
| 23 | Disponibilidad diseñadoras | 0d | 2015-04-29 | 2015-04-29 |  | start no earlier than 2015-04-29 |  |

Changed:

| ID | Task | Start | Finish | Duration | Complete | Total float | Predecessors |
| --- | --- | --- | --- | --- | --- | --- | --- |
| 1 | Gestión del Proyecto |  |  |  | 4% → 12% | 0d → 0.25d |  |
| 3 | **Análisis** |  | 2015-04-23 → 2015-04-27 (+4d) | 6.75d → 9.25d? | 37% → 73% | 0.25d → 0d |  |
| 4 | Reuniones |  | 2015-04-16 A |  | 75% → 100% | 1.38d → none |  |
| 5 | Especificación de requerimientos funcionales |  | 2015-04-16 A |  | 50% → 100% | 1.12d → none |  |
| 6 | Creación de Wireframes |  | 2015-04-20 A |  | 31% → 100% | 0.5d → none |  |
| 7 | Especificación de casos de uso |  | 2015-04-22 A |  | 6% → 100% | 0.25d → none |  |
| 8 | Matriz de trazabilidad: requerimientos / casos de uso | 2015-04-23 A | 2015-04-23 A |  | 0% → 100% | 0.25d → none |  |
| 11 | **Diseño Técnico** | 2015-04-23 A | 2015-05-06 → 2015-05-12 (+6d) | 8d → 12.5d? | 0% → 4% | 0.25d → 0d | 3 → none |
| 12 | Catalogo de servicios web a crear / consumir | 2015-05-04 → 2015-04-23 A (-11d) | 2015-05-06 → 2015-04-27 (-9d) |  | 0% → 25% | 0.25d → 0.5d | 20 → 9SS |
| 13 | Reuniones | 2015-04-23 → 2015-04-27 (+4d) | 2015-04-24 → 2015-04-28 (+4d) |  |  | 0.25d → 0d | none → 12, 10 |
| 14 | Definir estándares de desarrollo | 2015-04-24 → 2015-04-28 (+4d) | 2015-04-24 → 2015-04-29 (+5d) |  |  | 0.25d → 0d |  |
| 15 | Requerimientos no funcionales | 2015-04-24 → 2015-04-29 (+5d) | 2015-04-27 → 2015-04-29 (+2d) |  |  | 0.25d → 0d |  |
| 16 | Diagrama de Componentes | 2015-04-27 → 2015-04-29 (+2d) | 2015-04-27 → 2015-04-29 (+2d) |  |  | 0.25d → 0d |  |
| 17 | Diagrama de Paquetes | 2015-04-27 → 2015-04-30 (+3d) | 2015-04-27 → 2015-04-30 (+3d) |  |  | 0.25d → 0d |  |
| 18 | Diagrama de Despliegue | 2015-04-28 → 2015-04-30 (+2d) | 2015-04-28 → 2015-04-30 (+2d) |  |  | 0.25d → 0d |  |
| 19 | Diagrama de Clases | 2015-04-28 → 2015-04-30 (+2d) | 2015-04-30 → 2015-05-05 (+5d) |  |  | 0.25d → 0d |  |
| 20 | Diseño de base de datos | 2015-04-30 → 2015-05-05 (+5d) | 2015-05-04 → 2015-05-06 (+2d) |  |  | 0.25d → 0d |  |
| 24 | **Diseño Gráfico** | 2015-04-21 → 2015-04-29 (+8d) | 2015-05-18 → 2015-05-26 (+8d) |  |  | 18.75d → 15.5d | 6 → none |
| 25 | **Preparación de propuesta** | 2015-04-21 → 2015-04-29 (+8d) | 2015-04-30 → 2015-05-11 (+11d) |  |  | 18.75d → 15.5d | none → 23 |
| 26 | Reuniones con el cliente (información inicial) | 2015-04-21 → 2015-04-29 (+8d) | 2015-04-21 → 2015-04-29 (+8d) |  |  | 18.75d → 15.5d |  |
| 27 | Elaboración de propuesta grafica (2 Pág. Maestras) Móvil | 2015-04-21 → 2015-04-29 (+8d) | 2015-04-24 → 2015-05-05 (+11d) |  |  | 18.75d → 15.5d |  |
| 28 | Elaboración de propuesta grafica (2 Pág. Maestras) Web | 2015-04-24 → 2015-05-05 (+11d) | 2015-04-28 → 2015-05-07 (+9d) |  |  | 18.75d → 15.5d |  |
| 29 | Elaboración de assets y cortes de imágenes | 2015-04-28 → 2015-05-07 (+9d) | 2015-04-30 → 2015-05-11 (+11d) |  |  | 18.75d → 15.5d |  |
| 30 | **Preparación de maquetas y assets** | 2015-04-30 → 2015-05-11 (+11d) | 2015-05-18 → 2015-05-26 (+8d) |  |  | 45.75d → 42.5d |  |
| 31 | **BackOffice Administrador (Web)** | 2015-04-30 → 2015-05-11 (+11d) | 2015-05-13 → 2015-05-21 (+8d) |  |  | 45.75d → 42.5d |  |
| 32 | UI Login | 2015-04-30 → 2015-05-11 (+11d) | 2015-05-04 → 2015-05-12 (+8d) |  |  | 45.75d → 42.5d |  |
| 33 | UI - Mantenimiento de usuarios | 2015-05-04 → 2015-05-12 (+8d) | 2015-05-05 → 2015-05-13 (+8d) |  |  | 45.75d → 42.5d |  |
| 34 | UI - Mantenimiento de roles | 2015-05-05 → 2015-05-13 (+8d) | 2015-05-06 → 2015-05-14 (+8d) |  |  | 45.75d → 42.5d |  |
| 35 | Crear grupos de usuarios | 2015-05-06 → 2015-05-14 (+8d) | 2015-05-07 → 2015-05-15 (+8d) |  |  | 45.75d → 42.5d |  |
| 36 | Asociar grupos a perfiles | 2015-05-07 → 2015-05-15 (+8d) | 2015-05-08 → 2015-05-18 (+10d) |  |  | 45.75d → 42.5d |  |
| 37 | Administración de Colecciones | 2015-05-08 → 2015-05-18 (+10d) | 2015-05-08 → 2015-05-18 (+10d) |  |  | 45.75d → 42.5d |  |
| 38 | Administraciòn de documentos | 2015-05-11 → 2015-05-19 (+8d) | 2015-05-11 → 2015-05-19 (+8d) |  |  | 45.75d → 42.5d |  |
| 39 | Administrar contenido por perfil | 2015-05-11 → 2015-05-19 (+8d) | 2015-05-12 → 2015-05-20 (+8d) |  |  | 45.75d → 42.5d |  |
| 40 | Publicar contenido por perfil | 2015-05-12 → 2015-05-20 (+8d) | 2015-05-13 → 2015-05-21 (+8d) |  |  | 45.75d → 42.5d |  |
| 41 | **Frontoffice (App Mobile)** | 2015-05-13 → 2015-05-21 (+8d) | 2015-05-18 → 2015-05-26 (+8d) |  |  | 45.75d → 42.5d |  |
| 42 | Login | 2015-05-13 → 2015-05-21 (+8d) | 2015-05-13 → 2015-05-21 (+8d) |  |  | 45.75d → 42.5d |  |
| 43 | Lista contenido | 2015-05-14 → 2015-05-22 (+8d) | 2015-05-14 → 2015-05-22 (+8d) |  |  | 45.75d → 42.5d |  |
| 44 | Ver agrupaciones | 2015-05-14 → 2015-05-22 (+8d) | 2015-05-15 → 2015-05-25 (+10d) |  |  | 45.75d → 42.5d |  |
| 45 | Notificaciones | 2015-05-15 → 2015-05-25 (+10d) | 2015-05-18 → 2015-05-26 (+8d) |  |  | 45.75d → 42.5d |  |
| 46 | **Configuración del Ambiente de Trabajo** |  | 2015-05-07 → 2015-05-08 (+1d) | 1.5d → 2d |  | 0.25d → 2d | none → 21SS |
| 48 | Configurar integración continua |  | 2015-05-07 → 2015-05-08 (+1d) | 0.5d → 1d |  | 0.25d → 2d |  |
| 49 | **Desarrollo** | 2015-05-06 → 2015-05-12 (+6d) | 2015-07-02 → 2015-07-07 (+5d) | 40.5d? → 39d? |  | 0.25d → 0d |  |
| 50 | **Web Services** | 2015-05-07 → 2015-05-12 (+5d) | 2015-06-10 → 2015-06-15 (+5d) |  |  | 0.25d → 0d |  |
| 51 | Reuniones | 2015-05-07 → 2015-05-12 (+5d) | 2015-05-11 → 2015-05-14 (+3d) |  |  | 0.25d → 0d |  |
| 52 | Creación servicio web y estructura base | 2015-05-11 → 2015-05-14 (+3d) | 2015-05-13 → 2015-05-18 (+5d) |  |  | 0.25d → 0d |  |
| 53 | Implementación log (bitácora) | 2015-05-13 → 2015-05-18 (+5d) | 2015-05-18 → 2015-05-21 (+3d) |  |  | 0.25d → 0d |  |
| 54 | Implementación utilitarios base (parseo, conversión) | 2015-05-18 → 2015-05-21 (+3d) | 2015-05-20 → 2015-05-25 (+5d) |  |  | 0.25d → 0d |  |
| 55 | Integración YANBAL - Active Directory | 2015-05-20 → 2015-05-25 (+5d) | 2015-05-22 → 2015-05-27 (+5d) |  |  | 0.25d → 0d |  |
| 56 | Autenticacion / login | 2015-05-22 → 2015-05-27 (+5d) | 2015-05-25 → 2015-05-28 (+3d) |  |  | 0.25d → 0d |  |
| 57 | Descargar contenido (PDF,Imagenes,Video,Audio) | 2015-05-25 → 2015-05-28 (+3d) | 2015-05-26 → 2015-05-29 (+3d) |  |  | 0.25d → 0d |  |
| 58 | Listar documentos descargados | 2015-05-26 → 2015-05-29 (+3d) | 2015-05-27 → 2015-06-01 (+5d) |  |  | 0.25d → 0d |  |
| 59 | Eliminar documentos | 2015-05-27 → 2015-06-01 (+5d) | 2015-05-28 → 2015-06-02 (+5d) |  |  | 0.25d → 0d |  |
| 60 | Insertar Metricas Usabilidad | 2015-05-28 → 2015-06-02 (+5d) | 2015-06-01 → 2015-06-04 (+3d) |  |  | 0.25d → 0d |  |
| 61 | CRUD Usuarios | 2015-06-01 → 2015-06-04 (+3d) | 2015-06-02 → 2015-06-05 (+3d) |  |  | 0.25d → 0d |  |
| 62 | CRUD Roles | 2015-06-02 → 2015-06-05 (+3d) | 2015-06-03 → 2015-06-08 (+5d) |  |  | 0.25d → 0d |  |
| 63 | CRUD agrupaciones | 2015-06-03 → 2015-06-08 (+5d) | 2015-06-04 → 2015-06-09 (+5d) |  |  | 0.25d → 0d |  |
| 64 | CRUD Contenidos | 2015-06-04 → 2015-06-09 (+5d) | 2015-06-08 → 2015-06-11 (+3d) |  |  | 0.25d → 0d |  |
| 65 | Administrar parametros | 2015-06-08 → 2015-06-11 (+3d) | 2015-06-08 → 2015-06-11 (+3d) |  |  | 0.25d → 0d |  |
| 66 | Actualización de servicios | 2015-06-08 → 2015-06-11 (+3d) | 2015-06-09 → 2015-06-12 (+3d) |  |  | 0.25d → 0d |  |
| 67 | Actualizar documentación de servicios | 2015-06-09 → 2015-06-12 (+3d) | 2015-06-10 → 2015-06-15 (+5d) |  |  | 0.25d → 0d |  |
| 68 | **HTML** | 2015-05-07 → 2015-05-12 (+5d) | 2015-05-13 → 2015-05-18 (+5d) |  |  | 14.25d → 14d |  |
| 69 | Portal Web | 2015-05-07 → 2015-05-12 (+5d) | 2015-05-11 → 2015-05-14 (+3d) |  |  | 14.25d → 14d |  |
| 70 | PhoneGap App | 2015-05-11 → 2015-05-14 (+3d) | 2015-05-13 → 2015-05-18 (+5d) |  |  | 14.25d → 14d |  |
| 71 | **Portal Web** | 2015-06-10 → 2015-06-15 (+5d) | 2015-07-02 → 2015-07-07 (+5d) |  |  | 0.25d → 0d |  |
| 72 | Aplicación y pruebas de estilo base | 2015-06-10 → 2015-06-15 (+5d) | 2015-06-11 → 2015-06-16 (+5d) |  |  | 0.25d → 0d |  |
| 73 | UI Login | 2015-06-11 → 2015-06-16 (+5d) | 2015-06-12 → 2015-06-17 (+5d) |  |  | 0.25d → 0d |  |
| 74 | UI - Mantenimiento de usuarios | 2015-06-12 → 2015-06-17 (+5d) | 2015-06-15 → 2015-06-18 (+3d) |  |  | 0.25d → 0d |  |
| 75 | UI - Mantenimiento de roles | 2015-06-15 → 2015-06-18 (+3d) | 2015-06-16 → 2015-06-19 (+3d) |  |  | 0.25d → 0d |  |
| 76 | Crear grupos de usuarios | 2015-06-16 → 2015-06-19 (+3d) | 2015-06-18 → 2015-06-23 (+5d) |  |  | 0.25d → 0d |  |
| 77 | Asociar grupos a perfiles | 2015-06-18 → 2015-06-23 (+5d) | 2015-06-19 → 2015-06-24 (+5d) |  |  | 0.25d → 0d |  |

| ID | Task | Start | Finish | Total float | Other |
| --- | --- | --- | --- | --- | --- |
| 78 | **Administración de Colecciones** | 2015-06-19 → 2015-06-24 (+5d) | 2015-06-23 → 2015-06-26 (+3d) | 0.25d → 0d |  |
| 79 | Crear colección | 2015-06-19 → 2015-06-24 (+5d) | 2015-06-19 → 2015-06-24 (+5d) | 0.25d → 0d |  |
| 80 | Editar colección | 2015-06-19 → 2015-06-24 (+5d) | 2015-06-22 → 2015-06-25 (+3d) | 0.25d → 0d |  |
| 81 | Eliminar colección | 2015-06-22 → 2015-06-25 (+3d) | 2015-06-22 → 2015-06-25 (+3d) | 0.25d → 0d |  |
| 82 | Mover colección | 2015-06-22 → 2015-06-25 (+3d) | 2015-06-23 → 2015-06-26 (+3d) | 0.25d → 0d |  |
| 83 | **Administraciòn de documentos** | 2015-06-23 → 2015-06-26 (+3d) | 2015-06-25 → 2015-07-01 (+6d) | 0.25d → 0d |  |
| 84 | Agrerar documento | 2015-06-23 → 2015-06-26 (+3d) | 2015-06-24 → 2015-06-30 (+6d) | 0.25d → 0d |  |
| 85 | Editar atributos del documento | 2015-06-24 → 2015-06-30 (+6d) | 2015-06-24 → 2015-06-30 (+6d) | 0.25d → 0d |  |
| 86 | Eliminar documento | 2015-06-24 → 2015-06-30 (+6d) | 2015-06-25 → 2015-07-01 (+6d) | 0.25d → 0d |  |
| 87 | Mover documento | 2015-06-25 → 2015-07-01 (+6d) | 2015-06-25 → 2015-07-01 (+6d) | 0.25d → 0d |  |
| 88 | **Perfiles** | 2015-06-25 → 2015-07-01 (+6d) | 2015-07-02 → 2015-07-07 (+5d) | 0.25d → 0d |  |
| 89 | Administrar contenido por perfil | 2015-06-25 → 2015-07-01 (+6d) | 2015-06-30 → 2015-07-03 (+3d) | 0.25d → 0d |  |
| 90 | Publicar contenido por perfil | 2015-06-30 → 2015-07-03 (+3d) | 2015-07-02 → 2015-07-07 (+5d) | 0.25d → 0d |  |
| 91 | **PhoneGap** | 2015-05-13 → 2015-05-18 (+5d) | 2015-06-12 → 2015-06-17 (+5d) | 14.25d → 14d |  |
| 92 | Listener para eventos Back | 2015-05-13 → 2015-05-18 (+5d) | 2015-05-14 → 2015-05-19 (+5d) | 14.25d → 14d |  |
| 93 | **Login** | 2015-05-14 → 2015-05-19 (+5d) | 2015-05-19 → 2015-05-22 (+3d) | 14.25d → 14d |  |
| 94 | UI | 2015-05-14 → 2015-05-19 (+5d) | 2015-05-14 → 2015-05-19 (+5d) | 14.25d → 14d |  |
| 95 | Servicios | 2015-05-15 → 2015-05-20 (+5d) | 2015-05-15 → 2015-05-20 (+5d) | 14.25d → 14d |  |
| 96 | Manejo de accesos y permisos | 2015-05-15 → 2015-05-20 (+5d) | 2015-05-19 → 2015-05-22 (+3d) | 14.25d → 14d |  |
| 97 | **Documentos** | 2015-05-19 → 2015-05-22 (+3d) | 2015-05-27 → 2015-06-01 (+5d) | 14.25d → 14d |  |
| 98 | Visualizar lista de documentos | 2015-05-19 → 2015-05-22 (+3d) | 2015-05-20 → 2015-05-25 (+5d) | 14.25d → 14d |  |
| 99 | Descargar documentos | 2015-05-20 → 2015-05-25 (+5d) | 2015-05-22 → 2015-05-27 (+5d) | 14.25d → 14d |  |
| 100 | Llamada a visor - Android | 2015-05-22 → 2015-05-27 (+5d) | 2015-05-25 → 2015-05-28 (+3d) | 14.25d → 14d |  |
| 101 | Visualizar documentos - iOS | 2015-05-25 → 2015-05-28 (+3d) | 2015-05-25 → 2015-05-28 (+3d) | 14.25d → 14d |  |
| 102 | Visualizar documentos - Windows Phone | 2015-05-25 → 2015-05-28 (+3d) | 2015-05-26 → 2015-05-29 (+3d) | 14.25d → 14d |  |
| 103 | Eliminar un documento | 2015-05-26 → 2015-05-29 (+3d) | 2015-05-26 → 2015-05-29 (+3d) | 14.25d → 14d |  |
| 104 | Editar atributos | 2015-05-27 → 2015-06-01 (+5d) | 2015-05-27 → 2015-06-01 (+5d) | 14.25d → 14d |  |
| 105 | **Agrupaciones** | 2015-05-28 → 2015-06-02 (+5d) | 2015-06-01 → 2015-06-04 (+3d) | 14.25d → 14d |  |
| 106 | Ver agrupaciones | 2015-05-28 → 2015-06-02 (+5d) | 2015-05-29 → 2015-06-03 (+5d) | 14.25d → 14d |  |
| 107 | Servicios | 2015-05-29 → 2015-06-03 (+5d) | 2015-06-01 → 2015-06-04 (+3d) | 14.25d → 14d |  |
| 108 | **Notificaciones** | 2015-06-02 → 2015-06-05 (+3d) | 2015-06-09 → 2015-06-12 (+3d) | 14.25d → 14d |  |
| 109 | Desplegar notificación genérica - Android | 2015-06-02 → 2015-06-05 (+3d) | 2015-06-02 → 2015-06-05 (+3d) | 14.25d → 14d |  |
| 110 | Desplegar notificación genérica - iOS | 2015-06-03 → 2015-06-08 (+5d) | 2015-06-03 → 2015-06-08 (+5d) | 14.25d → 14d |  |
| 111 | Desplegar notificación genérica - Windows Phone | 2015-06-04 → 2015-06-09 (+5d) | 2015-06-04 → 2015-06-09 (+5d) | 14.25d → 14d |  |
| 112 | Desplegar notificación con redirección a documentos - Android | 2015-06-05 → 2015-06-10 (+5d) | 2015-06-05 → 2015-06-10 (+5d) | 14.25d → 14d |  |
| 113 | Desplegar notificación con redirección a documentos - iOS | 2015-06-05 → 2015-06-10 (+5d) | 2015-06-08 → 2015-06-11 (+3d) | 14.25d → 14d |  |
| 114 | Desplegar notificación con redirección a documentos - Windows Phone | 2015-06-08 → 2015-06-11 (+3d) | 2015-06-09 → 2015-06-12 (+3d) | 14.25d → 14d |  |
| 115 | Integración con Google Analytics | 2015-06-09 → 2015-06-12 (+3d) | 2015-06-11 → 2015-06-16 (+5d) | 14.25d → 14d |  |
| 116 | Sincronización a demanda del usuario | 2015-06-11 → 2015-06-16 (+5d) | 2015-06-12 → 2015-06-17 (+5d) | 14.25d → 14d |  |
| 117 | **Revisión de Pares PhoneGap** | 2015-06-12 → 2015-06-17 (+5d) | 2015-06-15 → 2015-06-18 (+3d) | 14.25d → 14d |  |
| 118 | Soporte Ejecución Revisión de Pares | 2015-06-12 → 2015-06-17 (+5d) | 2015-06-12 → 2015-06-17 (+5d) | 14.25d → 14d |  |
| 119 | Correcciones Revisión de Pares | 2015-06-12 → 2015-06-17 (+5d) | 2015-06-15 → 2015-06-18 (+3d) | 14.25d → 14d |  |
| 120 | **Aseguramiento de la Calidad** | 2015-06-08 → 2015-06-11 (+3d) | 2015-07-16 → 2015-07-21 (+5d) | 0.25d → 0d |  |
| 121 | Plan de Pruebas (Funcionales y Rendimiento) | 2015-06-08 → 2015-06-11 (+3d) | 2015-06-10 → 2015-06-15 (+5d) | 25.25d → 25d | resources QAII - 1 → QAII |
| 122 | Configuración Ambientes de QA | 2015-06-10 → 2015-06-15 (+5d) | 2015-06-11 → 2015-06-16 (+5d) | 24.25d → 24d | resources QAII - 1 → QAII |
| 123 | **PhoneGap** | 2015-06-11 → 2015-06-16 (+5d) | 2015-06-25 → 2015-07-01 (+6d) | 14.25d → 14d |  |
| 124 | Estimación y Creación de Casos de Prueba | 2015-06-11 → 2015-06-16 (+5d) | 2015-06-15 → 2015-06-18 (+3d) | 22.25d → 22d | resources QAI - 2; QAII - 1 → QAI - 1; QAII |
| 125 | **Ejecución en Tablet** | 2015-06-15 → 2015-06-18 (+3d) | 2015-06-24 → 2015-06-30 (+6d) | 15.25d → 15d |  |
| 126 | Ejecución en Samsung de 10.1" /SO Android 4.1.2 (Principal) | 2015-06-15 → 2015-06-18 (+3d) | 2015-06-18 → 2015-06-23 (+5d) | 15.25d → 15d | resources QAI - 2; QAI - 5 → QAI - 1; QAI - 3 |
| 127 | Ejecución en Lenovo 7" / SO Android 4.2.2 (Secundario) | 2015-06-18 → 2015-06-23 (+5d) | 2015-06-19 → 2015-06-24 (+5d) | 15.25d → 15d | resources QAI - 2; QAI - 5 → QAI - 1; QAI - 3 |
| 128 | Tablet AOC / SO: Android 4.1.1 (Secundario) | 2015-06-19 → 2015-06-24 (+5d) | 2015-06-22 → 2015-06-25 (+3d) | 15.25d → 15d | resources QAI - 2; QAI - 5 → QAI - 1; QAI - 3 |
| 129 | Ejecución en Ipad SO 7 (Secundario) | 2015-06-22 → 2015-06-25 (+3d) | 2015-06-23 → 2015-06-26 (+3d) | 15.25d → 15d | resources QAI - 2; QAI - 5 → QAI - 1; QAI - 3 |
| 130 | Ejecución en Ipad SO 8 (Secundario) | 2015-06-23 → 2015-06-26 (+3d) | 2015-06-24 → 2015-06-30 (+6d) | 15.25d → 15d | resources QAI - 2; QAI - 5 → QAI - 1; QAI - 3 |
| 131 | **Ejecución en SmartPhone** | 2015-06-15 → 2015-06-18 (+3d) | 2015-06-25 → 2015-07-01 (+6d) | 14.25d → 14d |  |
| 132 | Nokia Lumia 520 / SO: Windows Phone 8.0 (Principal) | 2015-06-15 → 2015-06-18 (+3d) | 2015-06-18 → 2015-06-23 (+5d) | 14.25d → 14d | resources QAI - 3; QAI - 6 → QAI - 2; QAI - 4 |
| 133 | Ejecución en Samsung Galaxy Chat/SO -SO Android 4.1.2 (secundario) | 2015-06-18 → 2015-06-23 (+5d) | 2015-06-19 → 2015-06-24 (+5d) | 14.25d → 14d | resources QAI - 3; QAI - 6 → QAI - 2; QAI - 4 |
| 134 | Samsung Galaxy S III Mini / SO: Android 4.1.2 (Principal) | 2015-06-19 → 2015-06-24 (+5d) | 2015-06-22 → 2015-06-25 (+3d) | 14.25d → 14d | resources QAI - 3; QAI - 6 → QAI - 2; QAI - 4 |
| 135 | Ejecución en Iphone 4 / iSO 7 (Principal) | 2015-06-22 → 2015-06-25 (+3d) | 2015-06-23 → 2015-06-26 (+3d) | 14.25d → 14d | resources QAI - 3; QAI - 6 → QAI - 2; QAI - 4 |
| 136 | Ejecución en Iphone 5 / iSO 7 (Secundario) | 2015-06-23 → 2015-06-26 (+3d) | 2015-06-24 → 2015-06-30 (+6d) | 14.25d → 14d | resources QAI - 3; QAI - 6 → QAI - 2; QAI - 4 |
| 137 | Ejecución en Iphone 6 / iSO 7 (Secundario) | 2015-06-24 → 2015-06-30 (+6d) | 2015-06-25 → 2015-07-01 (+6d) | 14.25d → 14d | resources QAI - 3; QAI - 6 → QAI - 2; QAI - 4 |
| 138 | **Portal Web** | 2015-06-30 → 2015-07-03 (+3d) | 2015-07-09 → 2015-07-14 (+5d) | 0.25d → 0d |  |
| 139 | Estimación y Creación de Casos de Prueba | 2015-06-30 → 2015-07-03 (+3d) | 2015-07-02 → 2015-07-07 (+5d) | 5.25d → 5d | resources QAI - 1; QAII - 1 → QAI - 1; QAII |
| 140 | **Ejecución en Web Browser - IE9 (Principal)** | 2015-07-02 → 2015-07-07 (+5d) | 2015-07-08 → 2015-07-13 (+5d) | 0.25d → 0d |  |
| 141 | Ejecución de casos de prueba funcionales | 2015-07-02 → 2015-07-07 (+5d) | 2015-07-06 → 2015-07-09 (+3d) | 0.25d → 0d | resources QAI - 1; QAI- 4 → QAI - 3; QAI - 1 |
| 142 | Reporte de errores | 2015-07-07 → 2015-07-10 (+3d) | 2015-07-07 → 2015-07-10 (+3d) | 0.25d → 0d | resources QAI - 1; QAI- 4 → QAI - 1; QAI - 3 |
| 143 | Verificación de errores | 2015-07-07 → 2015-07-10 (+3d) | 2015-07-07 → 2015-07-10 (+3d) | 0.25d → 0d | resources QAI - 1; QAI- 4 → QAI - 1; QAI - 3 |
| 144 | Pruebas exploratoria | 2015-07-08 → 2015-07-13 (+5d) | 2015-07-08 → 2015-07-13 (+5d) | 0.25d → 0d | resources QAI - 1; QAI- 4 → QAI - 1; QAI - 3 |
| 145 | Ejecución en Web Browser - Chrome 40 (Secundario) | 2015-07-08 → 2015-07-13 (+5d) | 2015-07-09 → 2015-07-14 (+5d) | 0.25d → 0d | resources QAI - 1; QAI- 4 → QAI - 1; QAI - 3 |
| 146 | **Soporte a Pruebas Funcionales** | 2015-06-15 → 2015-06-18 (+3d) | 2015-07-09 → 2015-07-14 (+5d) | 4.25d → 4d |  |
| 147 | **PhoneGap** | 2015-06-15 → 2015-06-18 (+3d) | 2015-06-30 → 2015-07-03 (+3d) | 11.75d → 11.5d |  |

| ID | Task | Start | Finish | Total float | Other |
| --- | --- | --- | --- | --- | --- |
| 148 | Resolución Bugs | 2015-06-15 → 2015-06-18 (+3d) | 2015-06-30 → 2015-07-03 (+3d) | 11.75d → 11.5d |  |
| 149 | **Portal Web** | 2015-07-02 → 2015-07-07 (+5d) | 2015-07-09 → 2015-07-14 (+5d) | 4.25d → 4d |  |
| 150 | Resolución Bugs | 2015-07-02 → 2015-07-07 (+5d) | 2015-07-09 → 2015-07-14 (+5d) | 4.25d → 4d |  |
| 151 | **Pruebas de Rendimiento** | 2015-07-03 → 2015-07-08 (+5d) | 2015-07-16 → 2015-07-21 (+5d) | 0.25d → 0d |  |
| 152 | Creación de Scripts (Flujo: 6WS) | 2015-07-03 → 2015-07-08 (+5d) | 2015-07-09 → 2015-07-14 (+5d) | 4.75d → 4.5d | resources QAII - 1 → QAII |
| 153 | **Ejecución de Pruebas** | 2015-07-09 → 2015-07-14 (+5d) | 2015-07-14 → 2015-07-17 (+3d) | 0.25d → 0d |  |
| 154 | Preparación del Ambiente | 2015-07-09 → 2015-07-14 (+5d) | 2015-07-10 → 2015-07-15 (+5d) | 0.25d → 0d | resources QAII - 1 → QAII |
| 155 | Prueba de Ambiente | 2015-07-10 → 2015-07-15 (+5d) | 2015-07-13 → 2015-07-16 (+3d) | 0.25d → 0d | resources QAII - 1 → QAII |
| 156 | Ejecución prueba de carga | 2015-07-13 → 2015-07-16 (+3d) | 2015-07-14 → 2015-07-17 (+3d) | 0.25d → 0d | resources QAII - 1 → QAII |
| 157 | **Documentación** | 2015-07-14 → 2015-07-17 (+3d) | 2015-07-16 → 2015-07-21 (+5d) | 0.25d → 0d |  |
| 158 | Parsing Logs | 2015-07-14 → 2015-07-17 (+3d) | 2015-07-15 → 2015-07-20 (+5d) | 0.25d → 0d | resources QAII - 1 → QAII |
| 159 | Análisis y Notas Iniciales | 2015-07-15 → 2015-07-20 (+5d) | 2015-07-15 → 2015-07-20 (+5d) | 0.25d → 0d | resources QAII - 1 → QAII |
| 160 | Creación de documento de resultados | 2015-07-15 → 2015-07-20 (+5d) | 2015-07-16 → 2015-07-21 (+5d) | 0.25d → 0d | resources QAII - 1 → QAII |
| 161 | **Documentación** | 2015-07-09 → 2015-07-14 (+5d) | 2015-07-15 → 2015-07-20 (+5d) | 4.25d → 4d |  |
| 162 | Manual de instalación | 2015-07-09 → 2015-07-14 (+5d) | 2015-07-13 → 2015-07-16 (+3d) | 4.25d → 4d |  |
| 163 | Manual de usuario | 2015-07-13 → 2015-07-16 (+3d) | 2015-07-15 → 2015-07-20 (+5d) | 4.25d → 4d |  |
| 164 | **Generación de Binarios** | 2015-07-16 → 2015-07-21 (+5d) | 2015-07-16 → 2015-07-21 (+5d) | 0.25d → 0d |  |
| 165 | Portal Web / Web Services | 2015-07-16 → 2015-07-21 (+5d) | 2015-07-16 → 2015-07-21 (+5d) | 0.5d → 0.25d |  |
| 166 | Aplicaciones Moviles (iOS, Android, Windows Phone) | 2015-07-16 → 2015-07-21 (+5d) | 2015-07-16 → 2015-07-21 (+5d) | 0.25d → 0d |  |
| 167 | **Despliegue** | 2015-07-16 → 2015-07-21 (+5d) | 2015-07-21 → 2015-07-24 (+3d) | 0.25d → 0d |  |
| 168 | Publicacion / Ejecución despliegue en Ambiente UAT YANBAL | 2015-07-16 → 2015-07-21 (+5d) | 2015-07-20 → 2015-07-23 (+3d) | 0.25d → 0d |  |
| 169 | Publicación / Ejecución despliegue en Ambiente Producción YANBAL | 2015-07-20 → 2015-07-23 (+3d) | 2015-07-21 → 2015-07-24 (+3d) | 0.25d → 0d |  |

## Version 3 (data date 2008-01-09, saved 2015-05-02, file Yanbal - Kiosko V2 - 20150430.mpp)

Last finish stays 2015-07-24.

Changed:

| ID | Task | Start | Finish | Duration | Complete | Total float | Other |
| --- | --- | --- | --- | --- | --- | --- | --- |
| 1 | Gestión del Proyecto |  |  |  | 12% → 17% | 0.25d → 2.75d |  |
| 3 | **Análisis** |  | 2015-04-27 → 2015-04-28 (+1d) | 9.25d? → 9.75d? | 73% → 79% | 0d → 0.38d |  |
| 5 | Especificación de requerimientos funcionales |  | 2015-04-16 A → 2015-04-17 A (+1d) | 0.5d → 0.75d |  |  |  |
| 7 | Especificación de casos de uso |  | 2015-04-22 A → 2015-04-24 A (+2d) | 2d → 4d |  |  |  |
| 10 | Modificación de documentos | 2015-04-27 A | 2015-04-27 → 2015-04-28 (+1d) | 0.5d? → 1d? | 0% → 50% | 0d → 0.38d |  |
| 11 | **Diseño Técnico** |  |  |  | 4% → 17% |  |  |
| 12 | Catalogo de servicios web a crear / consumir |  |  |  | 25% → 50% | 0.5d → 1.38d |  |
| 13 | Reuniones | 2015-04-27 A |  |  | 0% → 25% | 0d → 0.38d |  |
| 16 | Diagrama de Componentes | 2015-04-29 A |  |  | 0% → 50% | 0d → 0.5d |  |
| 18 | Diagrama de Despliegue | 2015-04-30 A |  |  | 0% → 50% | 0d → 0.5d |  |
| 19 | Diagrama de Clases | 2015-04-30 A |  |  | 0% → 25% |  |  |
| 23 | Disponibilidad UX |  |  |  |  | 15.5d → 16d | was named Disponibilidad diseñadoras |
| 24 | **Diseño Gráfico** | 2015-04-29 A |  |  | 0% → 4% | 15.5d → 42.5d |  |
| 25 | **Preparación de propuesta** | 2015-04-29 A |  |  | 0% → 10% |  |  |
| 26 | Reuniones con el cliente (información inicial) | 2015-04-29 A |  |  | 0% → 33% | 15.5d → 15.75d |  |
| 27 | Elaboración de propuesta grafica (2 Pág. Maestras) Móvil | 2015-04-29 A |  |  | 0% → 10% |  |  |
| 28 | Elaboración de propuesta grafica (2 Pág. Maestras) Web | 2015-05-05 A |  |  | 0% → 11% |  |  |

## Version 4 (data date 2008-01-09, saved 2015-05-04, file Yanbal - Kiosko V2 - 20150504.mpp)

Last finish 2015-07-24 → 2015-08-03 (+10d).

Changed:

| ID | Task | Start | Finish | Duration | Complete | Total float | Other |
| --- | --- | --- | --- | --- | --- | --- | --- |
| 1 | Gestión del Proyecto |  |  |  | 17% → 19% | 2.75d → 6.12d |  |
| 3 | **Análisis** |  | 2015-04-28 → 2015-05-05 (+7d) | 9.75d? → 14.5d? | 79% → 77% |  |  |
| 4 | Reuniones (124) |  |  |  |  |  | was named Reuniones |
| 5 | Especificación de requerimientos funcionales (125) |  |  | 0.75d → 1d |  |  | was named Especificación de requerimientos funcionales |
| 6 | Creación de Wireframes (126) |  |  |  |  |  | was named Creación de Wireframes |
| 7 | Especificación de casos de uso (127) |  | 2015-04-24 A → 2015-04-27 A (+3d) | 4d → 5d |  |  | was named Especificación de casos de uso |
| 8 | Matriz de trazabilidad: requerimientos / casos de uso (128) |  |  |  |  |  | was named Matriz de trazabilidad: requerimientos / casos de uso |
| 9 | Aprobación Yanbal | 2015-04-23 → 2015-04-30 A (+7d) | 2015-04-27 → 2015-05-05 (+8d) | 2d? → 2.5d? |  | 0.88d → 0.38d |  |
| 10 | Modificación de documentos | 2015-04-27 A → 2015-05-05 (+8d) | 2015-04-28 → 2015-05-05 (+7d) | 1d? → 0.5d? | 50% → 0% |  |  |
| 11 | **Diseño Técnico** |  | 2015-05-12 → 2015-05-18 (+6d) | 12.5d? → 15.88d? | 17% → 20% |  |  |
| 12 | Catalogo de servicios web a crear / consumir (137) |  | 2015-04-27 → 2015-04-30 (+3d) |  |  | 1.38d → 2.38d | was named Catalogo de servicios web a crear / consumir |
| 13 | Reuniones (129) |  | 2015-04-28 → 2015-05-06 (+8d) |  |  |  | was named Reuniones |
| 14 | Definir estándares de desarrollo (130) | 2015-04-28 → 2015-05-06 A (+8d) | 2015-04-29 → 2015-05-07 (+8d) |  | 0% → 50% | -0.25d → 0.12d | was named Definir estándares de desarrollo |
| 15 | Requerimientos no funcionales (131) | 2015-04-29 → 2015-05-07 A (+8d) | 2015-04-29 → 2015-05-07 (+8d) |  | 0% → 25% | 0.62d → 0d | was named Requerimientos no funcionales |
| 16 | Diagrama de Componentes (132) |  | 2015-04-29 → 2015-05-07 (+8d) |  |  | 0.5d → 0d | was named Diagrama de Componentes |
| 17 | Diagrama de Paquetes (133) | 2015-04-30 → 2015-05-07 (+7d) | 2015-04-30 → 2015-05-08 (+8d) |  |  | 0.5d → 0d | was named Diagrama de Paquetes |
| 18 | Diagrama de Despliegue (134) | 2015-04-30 A → 2015-05-08 (+8d) | 2015-04-30 → 2015-05-08 (+8d) |  | 50% → 0% | 0.5d → 0d | was named Diagrama de Despliegue |
| 19 | Diagrama de Clases (135) |  | 2015-05-05 → 2015-05-12 (+7d) |  |  |  | was named Diagrama de Clases |
| 20 | Diseño de base de datos (136) | 2015-05-05 → 2015-05-12 (+7d) | 2015-05-06 → 2015-05-13 (+7d) |  |  |  | was named Diseño de base de datos |
| 21 | Aprobación Yanbal | 2015-05-06 → 2015-05-13 (+7d) | 2015-05-08 → 2015-05-15 (+7d) |  |  |  |  |
| 22 | Modificación de documentos | 2015-05-08 → 2015-05-15 (+7d) | 2015-05-12 → 2015-05-18 (+6d) | 2d? → 1d? |  |  |  |
| 24 | **Diseño Gráfico** |  |  |  | 4% → 10% | 42.5d → 45.88d |  |
| 25 | **Preparación de propuesta** |  |  |  | 10% → 24% | 15.5d → 18.88d |  |
| 27 | Elaboración de propuesta grafica (2 Pág. Maestras) Móvil |  |  |  | 10% → 30% | 15.5d → 19.62d |  |
| 28 | Elaboración de propuesta grafica (2 Pág. Maestras) Web |  |  |  | 11% → 33% | 15.5d → 18.88d |  |
| 46 | **Configuración del Ambiente de Trabajo** | 2015-05-06 → 2015-05-13 (+7d) | 2015-05-08 → 2015-05-15 (+7d) |  |  | 2d → 1d |  |
| 47 | Configurar ambientes de desarrollo (personal y virtual) | 2015-05-06 → 2015-05-13 (+7d) | 2015-05-07 → 2015-05-14 (+7d) |  |  | 2d → 1d |  |
| 48 | Configurar integración continua | 2015-05-07 → 2015-05-14 (+7d) | 2015-05-08 → 2015-05-15 (+7d) |  |  | 2d → 1d |  |
| 49 | **Desarrollo** | 2015-05-12 → 2015-05-18 (+6d) | 2015-07-07 → 2015-07-13 (+6d) |  |  |  |  |
| 50 | **Web Services** | 2015-05-12 → 2015-05-18 (+6d) | 2015-06-15 → 2015-06-19 (+4d) |  |  |  |  |
| 51 | Reuniones | 2015-05-12 → 2015-05-18 (+6d) | 2015-05-14 → 2015-05-20 (+6d) |  |  |  |  |
| 52 | Creación servicio web y estructura base | 2015-05-14 → 2015-05-20 (+6d) | 2015-05-18 → 2015-05-22 (+4d) |  |  |  |  |
| 53 | Implementación log (bitácora) | 2015-05-18 → 2015-05-22 (+4d) | 2015-05-21 → 2015-05-27 (+6d) |  |  |  |  |
| 54 | Implementación utilitarios base (parseo, conversión) | 2015-05-21 → 2015-05-27 (+6d) | 2015-05-25 → 2015-05-29 (+4d) |  |  |  |  |
| 55 | Integración YANBAL - Active Directory | 2015-05-25 → 2015-05-29 (+4d) | 2015-05-27 → 2015-06-02 (+6d) |  |  |  |  |
| 56 | Autenticacion / login | 2015-05-27 → 2015-06-02 (+6d) | 2015-05-28 → 2015-06-03 (+6d) |  |  |  |  |
| 57 | Descargar contenido (PDF,Imagenes,Video,Audio) | 2015-05-28 → 2015-06-03 (+6d) | 2015-05-29 → 2015-06-04 (+6d) |  |  |  |  |
| 58 | Listar documentos descargados | 2015-05-29 → 2015-06-04 (+6d) | 2015-06-01 → 2015-06-04 (+3d) |  |  |  |  |
| 59 | Eliminar documentos | 2015-06-01 → 2015-06-04 (+3d) | 2015-06-02 → 2015-06-05 (+3d) |  |  |  |  |
| 60 | Insertar Metricas Usabilidad | 2015-06-02 → 2015-06-05 (+3d) | 2015-06-04 → 2015-06-09 (+5d) |  |  |  |  |
| 61 | CRUD Usuarios | 2015-06-04 → 2015-06-09 (+5d) | 2015-06-05 → 2015-06-10 (+5d) |  |  |  |  |
| 62 | CRUD Roles | 2015-06-05 → 2015-06-10 (+5d) | 2015-06-08 → 2015-06-11 (+3d) |  |  |  |  |
| 63 | CRUD agrupaciones | 2015-06-08 → 2015-06-11 (+3d) | 2015-06-09 → 2015-06-12 (+3d) |  |  |  |  |
| 64 | CRUD Contenidos | 2015-06-09 → 2015-06-12 (+3d) | 2015-06-11 → 2015-06-16 (+5d) |  |  |  |  |
| 65 | Administrar parametros | 2015-06-11 → 2015-06-16 (+5d) | 2015-06-11 → 2015-06-17 (+6d) |  |  |  |  |
| 66 | Actualización de servicios | 2015-06-11 → 2015-06-17 (+6d) | 2015-06-12 → 2015-06-18 (+6d) |  |  |  |  |
| 67 | Actualizar documentación de servicios | 2015-06-12 → 2015-06-18 (+6d) | 2015-06-15 → 2015-06-19 (+4d) |  |  |  |  |
| 68 | **HTML** | 2015-05-12 → 2015-05-18 (+6d) | 2015-05-18 → 2015-05-22 (+4d) |  |  |  |  |
| 69 | Portal Web | 2015-05-12 → 2015-05-18 (+6d) | 2015-05-14 → 2015-05-20 (+6d) |  |  |  |  |
| 70 | PhoneGap App | 2015-05-14 → 2015-05-20 (+6d) | 2015-05-18 → 2015-05-22 (+4d) |  |  |  |  |
| 71 | **Portal Web** | 2015-06-15 → 2015-06-19 (+4d) | 2015-07-07 → 2015-07-13 (+6d) |  |  |  |  |
| 72 | Aplicación y pruebas de estilo base | 2015-06-15 → 2015-06-19 (+4d) | 2015-06-16 → 2015-06-22 (+6d) |  |  |  |  |
| 73 | UI Login | 2015-06-16 → 2015-06-22 (+6d) | 2015-06-17 → 2015-06-22 (+5d) |  |  |  |  |
| 74 | UI - Mantenimiento de usuarios | 2015-06-17 → 2015-06-22 (+5d) | 2015-06-18 → 2015-06-23 (+5d) |  |  |  |  |
| 75 | UI - Mantenimiento de roles | 2015-06-18 → 2015-06-23 (+5d) | 2015-06-19 → 2015-06-24 (+5d) |  |  |  |  |
| 76 | Crear grupos de usuarios | 2015-06-19 → 2015-06-24 (+5d) | 2015-06-23 → 2015-06-26 (+3d) |  |  |  |  |
| 77 | Asociar grupos a perfiles | 2015-06-23 → 2015-06-26 (+3d) | 2015-06-24 → 2015-06-30 (+6d) |  |  |  |  |
| 78 | **Administración de Colecciones** | 2015-06-24 → 2015-06-30 (+6d) | 2015-06-26 → 2015-07-02 (+6d) |  |  |  |  |
| 79 | Crear colección | 2015-06-24 → 2015-06-30 (+6d) | 2015-06-24 → 2015-07-01 (+7d) |  |  |  |  |
| 80 | Editar colección | 2015-06-24 → 2015-07-01 (+7d) | 2015-06-25 → 2015-07-01 (+6d) |  |  |  |  |
| 81 | Eliminar colección | 2015-06-25 → 2015-07-01 (+6d) | 2015-06-25 → 2015-07-02 (+7d) |  |  |  |  |
| 82 | Mover colección | 2015-06-25 → 2015-07-02 (+7d) | 2015-06-26 → 2015-07-02 (+6d) |  |  |  |  |
| 83 | **Administraciòn de documentos** | 2015-06-26 → 2015-07-02 (+6d) | 2015-07-01 → 2015-07-07 (+6d) |  |  |  |  |
| 84 | Agrerar documento | 2015-06-26 → 2015-07-02 (+6d) | 2015-06-30 → 2015-07-03 (+3d) |  |  |  |  |
| 85 | Editar atributos del documento | 2015-06-30 → 2015-07-03 (+3d) | 2015-06-30 → 2015-07-06 (+6d) |  |  |  |  |
| 86 | Eliminar documento | 2015-06-30 → 2015-07-06 (+6d) | 2015-07-01 → 2015-07-06 (+5d) |  |  |  |  |
| 87 | Mover documento | 2015-07-01 → 2015-07-06 (+5d) | 2015-07-01 → 2015-07-07 (+6d) |  |  |  |  |
| 88 | **Perfiles** | 2015-07-01 → 2015-07-07 (+6d) | 2015-07-07 → 2015-07-13 (+6d) |  |  |  |  |
| 89 | Administrar contenido por perfil | 2015-07-01 → 2015-07-07 (+6d) | 2015-07-03 → 2015-07-09 (+6d) |  |  |  |  |
| 90 | Publicar contenido por perfil | 2015-07-03 → 2015-07-09 (+6d) | 2015-07-07 → 2015-07-13 (+6d) |  |  |  |  |

| ID | Task | Start | Finish |
| --- | --- | --- | --- |
| 91 | **PhoneGap** | 2015-05-18 → 2015-05-22 (+4d) | 2015-06-17 → 2015-06-22 (+5d) |
| 92 | Listener para eventos Back | 2015-05-18 → 2015-05-22 (+4d) | 2015-05-19 → 2015-05-22 (+3d) |
| 93 | **Login** | 2015-05-19 → 2015-05-22 (+3d) | 2015-05-22 → 2015-05-28 (+6d) |
| 94 | UI | 2015-05-19 → 2015-05-22 (+3d) | 2015-05-19 → 2015-05-25 (+6d) |
| 95 | Servicios | 2015-05-20 → 2015-05-25 (+5d) | 2015-05-20 → 2015-05-26 (+6d) |
| 96 | Manejo de accesos y permisos | 2015-05-20 → 2015-05-26 (+6d) | 2015-05-22 → 2015-05-28 (+6d) |
| 97 | **Documentos** | 2015-05-22 → 2015-05-28 (+6d) | 2015-06-01 → 2015-06-05 (+4d) |
| 98 | Visualizar lista de documentos | 2015-05-22 → 2015-05-28 (+6d) | 2015-05-25 → 2015-05-28 (+3d) |
| 99 | Descargar documentos | 2015-05-25 → 2015-05-28 (+3d) | 2015-05-27 → 2015-06-01 (+5d) |
| 100 | Llamada a visor - Android | 2015-05-27 → 2015-06-01 (+5d) | 2015-05-28 → 2015-06-02 (+5d) |
| 101 | Visualizar documentos - iOS | 2015-05-28 → 2015-06-02 (+5d) | 2015-05-28 → 2015-06-03 (+6d) |
| 102 | Visualizar documentos - Windows Phone | 2015-05-28 → 2015-06-03 (+6d) | 2015-05-29 → 2015-06-03 (+5d) |
| 103 | Eliminar un documento | 2015-05-29 → 2015-06-03 (+5d) | 2015-05-29 → 2015-06-04 (+6d) |
| 104 | Editar atributos | 2015-06-01 → 2015-06-04 (+3d) | 2015-06-01 → 2015-06-05 (+4d) |
| 105 | **Agrupaciones** | 2015-06-02 → 2015-06-05 (+3d) | 2015-06-04 → 2015-06-10 (+6d) |
| 106 | Ver agrupaciones | 2015-06-02 → 2015-06-05 (+3d) | 2015-06-03 → 2015-06-08 (+5d) |
| 107 | Servicios | 2015-06-03 → 2015-06-08 (+5d) | 2015-06-04 → 2015-06-10 (+6d) |
| 108 | **Notificaciones** | 2015-06-05 → 2015-06-10 (+5d) | 2015-06-12 → 2015-06-17 (+5d) |
| 109 | Desplegar notificación genérica - Android | 2015-06-05 → 2015-06-10 (+5d) | 2015-06-05 → 2015-06-11 (+6d) |
| 110 | Desplegar notificación genérica - iOS | 2015-06-08 → 2015-06-11 (+3d) | 2015-06-08 → 2015-06-12 (+4d) |
| 111 | Desplegar notificación genérica - Windows Phone | 2015-06-09 → 2015-06-12 (+3d) | 2015-06-09 → 2015-06-15 (+6d) |
| 112 | Desplegar notificación con redirección a documentos - Android | 2015-06-10 → 2015-06-15 (+5d) | 2015-06-10 → 2015-06-16 (+6d) |
| 113 | Desplegar notificación con redirección a documentos - iOS | 2015-06-10 → 2015-06-16 (+6d) | 2015-06-11 → 2015-06-16 (+5d) |
| 114 | Desplegar notificación con redirección a documentos - Windows Phone | 2015-06-11 → 2015-06-16 (+5d) | 2015-06-12 → 2015-06-17 (+5d) |
| 115 | Integración con Google Analytics | 2015-06-12 → 2015-06-17 (+5d) | 2015-06-16 → 2015-06-19 (+3d) |
| 116 | Sincronización a demanda del usuario | 2015-06-16 → 2015-06-19 (+3d) | 2015-06-17 → 2015-06-22 (+5d) |
| 117 | **Revisión de Pares PhoneGap** | 2015-06-17 → 2015-06-22 (+5d) | 2015-06-18 → 2015-06-23 (+5d) |
| 118 | Soporte Ejecución Revisión de Pares | 2015-06-17 → 2015-06-22 (+5d) | 2015-06-17 → 2015-06-22 (+5d) |
| 119 | Correcciones Revisión de Pares | 2015-06-17 → 2015-06-22 (+5d) | 2015-06-18 → 2015-06-23 (+5d) |
| 120 | **Aseguramiento de la Calidad** | 2015-06-11 → 2015-06-16 (+5d) | 2015-07-21 → 2015-07-24 (+3d) |
| 121 | Plan de Pruebas (Funcionales y Rendimiento) | 2015-06-11 → 2015-06-16 (+5d) | 2015-06-15 → 2015-06-18 (+3d) |
| 122 | Configuración Ambientes de QA | 2015-06-15 → 2015-06-18 (+3d) | 2015-06-16 → 2015-06-19 (+3d) |
| 123 | **PhoneGap** | 2015-06-16 → 2015-06-19 (+3d) | 2015-07-01 → 2015-07-06 (+5d) |
| 124 | Estimación y Creación de Casos de Prueba | 2015-06-16 → 2015-06-19 (+3d) | 2015-06-18 → 2015-06-23 (+5d) |
| 125 | **Ejecución en Tablet** | 2015-06-18 → 2015-06-23 (+5d) | 2015-06-30 → 2015-07-03 (+3d) |
| 126 | Ejecución en Samsung de 10.1" /SO Android 4.1.2 (Principal) | 2015-06-18 → 2015-06-23 (+5d) | 2015-06-23 → 2015-06-26 (+3d) |
| 127 | Ejecución en Lenovo 7" / SO Android 4.2.2 (Secundario) | 2015-06-23 → 2015-06-26 (+3d) | 2015-06-24 → 2015-06-30 (+6d) |
| 128 | Tablet AOC / SO: Android 4.1.1 (Secundario) | 2015-06-24 → 2015-06-30 (+6d) | 2015-06-25 → 2015-07-01 (+6d) |
| 129 | Ejecución en Ipad SO 7 (Secundario) | 2015-06-25 → 2015-07-01 (+6d) | 2015-06-26 → 2015-07-02 (+6d) |
| 130 | Ejecución en Ipad SO 8 (Secundario) | 2015-06-26 → 2015-07-02 (+6d) | 2015-06-30 → 2015-07-03 (+3d) |
| 131 | **Ejecución en SmartPhone** | 2015-06-18 → 2015-06-23 (+5d) | 2015-07-01 → 2015-07-06 (+5d) |
| 132 | Nokia Lumia 520 / SO: Windows Phone 8.0 (Principal) | 2015-06-18 → 2015-06-23 (+5d) | 2015-06-23 → 2015-06-26 (+3d) |
| 133 | Ejecución en Samsung Galaxy Chat/SO -SO Android 4.1.2 (secundario) | 2015-06-23 → 2015-06-26 (+3d) | 2015-06-24 → 2015-06-30 (+6d) |
| 134 | Samsung Galaxy S III Mini / SO: Android 4.1.2 (Principal) | 2015-06-24 → 2015-06-30 (+6d) | 2015-06-25 → 2015-07-01 (+6d) |
| 135 | Ejecución en Iphone 4 / iSO 7 (Principal) | 2015-06-25 → 2015-07-01 (+6d) | 2015-06-26 → 2015-07-02 (+6d) |
| 136 | Ejecución en Iphone 5 / iSO 7 (Secundario) | 2015-06-26 → 2015-07-02 (+6d) | 2015-06-30 → 2015-07-03 (+3d) |
| 137 | Ejecución en Iphone 6 / iSO 7 (Secundario) | 2015-06-30 → 2015-07-03 (+3d) | 2015-07-01 → 2015-07-06 (+5d) |
| 138 | **Portal Web** | 2015-07-03 → 2015-07-09 (+6d) | 2015-07-14 → 2015-07-20 (+6d) |
| 139 | Estimación y Creación de Casos de Prueba | 2015-07-03 → 2015-07-09 (+6d) | 2015-07-07 → 2015-07-13 (+6d) |
| 140 | **Ejecución en Web Browser - IE9 (Principal)** | 2015-07-07 → 2015-07-13 (+6d) | 2015-07-13 → 2015-07-16 (+3d) |
| 141 | Ejecución de casos de prueba funcionales | 2015-07-07 → 2015-07-13 (+6d) | 2015-07-09 → 2015-07-15 (+6d) |
| 142 | Reporte de errores | 2015-07-10 → 2015-07-15 (+5d) | 2015-07-10 → 2015-07-15 (+5d) |
| 143 | Verificación de errores | 2015-07-10 → 2015-07-15 (+5d) | 2015-07-10 → 2015-07-16 (+6d) |
| 144 | Pruebas exploratoria | 2015-07-13 → 2015-07-16 (+3d) | 2015-07-13 → 2015-07-16 (+3d) |
| 145 | Ejecución en Web Browser - Chrome 40 (Secundario) | 2015-07-13 → 2015-07-16 (+3d) | 2015-07-14 → 2015-07-20 (+6d) |
| 146 | **Soporte a Pruebas Funcionales** | 2015-06-18 → 2015-06-23 (+5d) | 2015-07-14 → 2015-07-20 (+6d) |
| 147 | **PhoneGap** | 2015-06-18 → 2015-06-23 (+5d) | 2015-07-03 → 2015-07-08 (+5d) |
| 148 | Resolución Bugs | 2015-06-18 → 2015-06-23 (+5d) | 2015-07-03 → 2015-07-08 (+5d) |
| 149 | **Portal Web** | 2015-07-07 → 2015-07-13 (+6d) | 2015-07-14 → 2015-07-20 (+6d) |
| 150 | Resolución Bugs | 2015-07-07 → 2015-07-13 (+6d) | 2015-07-14 → 2015-07-20 (+6d) |
| 151 | **Pruebas de Rendimiento** | 2015-07-08 → 2015-07-13 (+5d) | 2015-07-21 → 2015-07-24 (+3d) |
| 152 | Creación de Scripts (Flujo: 6WS) | 2015-07-08 → 2015-07-13 (+5d) | 2015-07-14 → 2015-07-20 (+6d) |
| 153 | **Ejecución de Pruebas** | 2015-07-14 → 2015-07-20 (+6d) | 2015-07-17 → 2015-07-23 (+6d) |
| 154 | Preparación del Ambiente | 2015-07-14 → 2015-07-20 (+6d) | 2015-07-15 → 2015-07-21 (+6d) |
| 155 | Prueba de Ambiente | 2015-07-15 → 2015-07-21 (+6d) | 2015-07-16 → 2015-07-21 (+5d) |
| 156 | Ejecución prueba de carga | 2015-07-16 → 2015-07-21 (+5d) | 2015-07-17 → 2015-07-23 (+6d) |
| 157 | **Documentación** | 2015-07-17 → 2015-07-23 (+6d) | 2015-07-21 → 2015-07-24 (+3d) |
| 158 | Parsing Logs | 2015-07-17 → 2015-07-23 (+6d) | 2015-07-20 → 2015-07-23 (+3d) |
| 159 | Análisis y Notas Iniciales | 2015-07-20 → 2015-07-23 (+3d) | 2015-07-20 → 2015-07-24 (+4d) |
| 160 | Creación de documento de resultados | 2015-07-20 → 2015-07-24 (+4d) | 2015-07-21 → 2015-07-24 (+3d) |

| ID | Task | Start | Finish |
| --- | --- | --- | --- |
| 161 | **Documentación** | 2015-07-14 → 2015-07-20 (+6d) | 2015-07-20 → 2015-07-24 (+4d) |
| 162 | Manual de instalación | 2015-07-14 → 2015-07-20 (+6d) | 2015-07-16 → 2015-07-22 (+6d) |
| 163 | Manual de usuario | 2015-07-16 → 2015-07-22 (+6d) | 2015-07-20 → 2015-07-24 (+4d) |
| 164 | **Generación de Binarios** | 2015-07-21 → 2015-07-24 (+3d) | 2015-07-21 → 2015-07-27 (+6d) |
| 165 | Portal Web / Web Services | 2015-07-21 → 2015-07-24 (+3d) | 2015-07-21 → 2015-07-24 (+3d) |
| 166 | Aplicaciones Moviles (iOS, Android, Windows Phone) | 2015-07-21 → 2015-07-24 (+3d) | 2015-07-21 → 2015-07-27 (+6d) |
| 167 | **Despliegue** | 2015-07-21 → 2015-07-27 (+6d) | 2015-07-24 → 2015-08-03 (+10d) |
| 168 | Publicacion / Ejecución despliegue en Ambiente UAT YANBAL | 2015-07-21 → 2015-07-27 (+6d) | 2015-07-23 → 2015-07-31 (+8d) |
| 169 | Publicación / Ejecución despliegue en Ambiente Producción YANBAL | 2015-07-23 → 2015-07-31 (+8d) | 2015-07-24 → 2015-08-03 (+10d) |
