# Yanbal PhoneGap - Web

How a schedule from MS Project changed from version to version. A marks actual dates.

## Version 1 (data date 2008-01-09, saved 2015-06-11, file Yanbal - Kiosko V2 - 20150611.mpp)

| ID | WBS | Task | Duration | Start | Finish | Predecessors | Complete | Total float | Constraint |
| --- | --- | --- | --- | --- | --- | --- | --- | --- | --- |
| 1 |  | Gestión del proyecto | 75d | 2015-04-14 08:00 A | 2015-07-31 17:00 |  | 55% | 0d |  |
| 2 |  | Sesión de Inicio de Proyecto (KickOff) | 4h | 2015-04-14 08:00 A | 2015-04-14 12:00 A |  | 100% |  |  |
| 3 | 3 | **Análisis** | 15.25d? | 2015-04-14 13:00 A | 2015-05-06 15:00 A | 2 | 100% |  |  |
| 4 |  | Reuniones (124) | 2d? | 2015-04-14 13:00 A | 2015-04-16 12:00 A |  | 100% |  |  |
| 5 |  | Especificación de requerimientos funcionales (125) | 1d? | 2015-04-16 13:00 A | 2015-04-17 12:00 A | 4 | 100% |  |  |
| 6 |  | Creación de Wireframes (126) | 4d? | 2015-04-17 13:00 A | 2015-04-23 12:00 A | 5 | 100% |  |  |
| 7 |  | Especificación de casos de uso (127) | 3d? | 2015-04-23 13:00 A | 2015-04-28 12:00 A | 6 | 100% |  |  |
| 8 |  | Matriz de trazabilidad: requerimientos / casos de uso (128) | 0.25d? | 2015-04-28 13:00 A | 2015-04-28 15:00 A | 7 | 100% |  |  |
| 9 |  | Modificación de documentos (144) | 5d? | 2015-04-28 15:00 A | 2015-05-06 15:00 A | 8 | 100% |  |  |
| 10 |  | Fin Analisis | 1d? | 2015-05-14 08:00 | 2015-05-14 17:00 |  |  | 53d | start no earlier than 2015-05-14 08:00 |
| 11 | 5 | **Diseño Técnico** | 25d? | 2015-04-28 15:00 A | 2015-06-03 15:00 A |  | 100% |  |  |
| 12 |  | Reuniones (129) | 5d? | 2015-04-28 15:00 A | 2015-05-06 15:00 A | 9SS | 100% |  |  |
| 13 |  | Catalogo de servicios web a crear / consumir (137) | 1.5d? | 2015-05-06 15:00 A | 2015-05-08 10:00 A | 12 | 100% |  |  |
| 14 |  | Configurar ambiente de desarrollo (141 y 142) | 2d? | 2015-05-08 10:00 A | 2015-05-12 10:00 A | 13 | 100% |  |  |
| 15 |  | Revisión documentación Yanbal (143) | 0.25d? | 2015-05-12 10:00 A | 2015-05-12 12:00 A | 14 | 100% |  |  |
| 16 |  | Definir estándares de desarrollo (130 y 161) | 0.25d? | 2015-05-12 13:00 A | 2015-05-12 15:00 A | 15 | 100% |  |  |
| 17 |  | Requerimientos no funcionales (131 y 162) | 0.25d? | 2015-05-12 15:00 A | 2015-05-12 17:00 A | 16 | 100% |  |  |
| 18 |  | Arquitectura (132) | 1d? | 2015-05-13 08:00 A | 2015-05-13 17:00 A | 17 | 100% |  |  |
| 19 |  | Base de Datos (136 y 160) | 1d? | 2015-05-14 08:00 A | 2015-05-14 17:00 A | 18 | 100% |  |  |
| 20 |  | Especificación Técnica de la Solución (151 y 156) | 1.75d? | 2015-05-15 08:00 A | 2015-05-18 15:00 A | 19 | 100% |  |  |
| 21 |  | Diagrama de Clases (148 y 149) | 1d? | 2015-05-18 15:00 A | 2015-05-19 15:00 A | 20 | 100% |  |  |
| 22 |  | Mapa de Navegación (150 y 155) | 0.12d? | 2015-05-19 15:00 A | 2015-05-19 16:00 A | 21 | 100% |  |  |
| 23 |  | Perfiles del sistema (153 y 158) | 0.12d? | 2015-05-19 16:00 A | 2015-05-19 17:00 A | 22 | 100% |  |  |
| 24 |  | Especificación de pantallas (152 y 157) | 0.75d? | 2015-05-20 08:00 A | 2015-05-20 15:00 A | 23 | 100% |  |  |
| 25 |  | Modificación de documentos (205 y 206) | 10d? | 2015-05-20 15:00 A | 2015-06-03 15:00 A | 24 | 100% |  |  |
| 26 |  | Configuración Ambiente local de desarrollo | 10d? | 2015-05-20 15:00 A | 2015-06-03 15:00 A | 25SS | 100% |  |  |
| 27 |  | Fin Diseño Tecnico | 0d | 2015-06-09 08:00 | 2015-06-09 08:00 |  |  | 36d | start no earlier than 2015-06-09 08:00 |
| 28 |  | Disponibilidad UX | 0d | 2015-04-29 08:00 | 2015-04-29 08:00 |  |  | 64d | start no earlier than 2015-04-29 08:00 |
| 29 | 9 | **Diseño Gráfico** | 18d | 2015-04-29 08:00 A | 2015-05-25 17:00 A | 28 | 100% |  |  |
| 30 | 9.1 | **Preparación de propuesta** | 10.25d | 2015-04-29 08:00 A | 2015-05-14 10:00 A |  | 100% |  |  |
| 31 |  | Reuniones con el cliente (información inicial) | 0.75d | 2015-04-29 08:00 A | 2015-04-29 15:00 A |  | 100% |  |  |
| 32 |  | Elaboración de propuesta grafica (2 Pág. Maestras) Móvil | 3.5d | 2015-04-29 15:00 A | 2015-05-06 10:00 A | 31 | 100% |  |  |
| 33 |  | Elaboración de propuesta grafica (2 Pág. Maestras) Web | 3.5d | 2015-05-06 10:00 A | 2015-05-11 15:00 A | 32 | 100% |  |  |
| 34 |  | Elaboración de assets y cortes de imágenes | 2.5d | 2015-05-11 15:00 A | 2015-05-14 10:00 A | 33 | 100% |  |  |
| 35 | 9.2 | **Preparación de maquetas y assets** | 7.75d | 2015-05-14 10:00 A | 2015-05-25 17:00 A | 30 | 100% |  |  |
| 36 | 9.2.1 | **Kiosko Móvil** | 4.75d | 2015-05-14 10:00 A | 2015-05-20 17:00 A |  | 100% |  |  |
| 37 |  | Login | 0.75d | 2015-05-14 10:00 A | 2015-05-14 17:00 A |  | 100% |  |  |
| 38 |  | Página Principal | 0.75d | 2015-05-15 08:00 A | 2015-05-15 15:00 A | 37 | 100% |  |  |
| 39 |  | Ver Colección | 0.75d | 2015-05-15 15:00 A | 2015-05-18 12:00 A | 38 | 100% |  |  |
| 40 |  | Notificaciones | 0.75d | 2015-05-18 13:00 A | 2015-05-19 10:00 A | 39 | 100% |  |  |
| 41 |  | Configuración | 0.75d | 2015-05-19 10:00 A | 2015-05-19 17:00 A | 40 | 100% |  |  |
| 42 |  | Ver/Descargar/Eliminar Archivo | 1d | 2015-05-20 08:00 A | 2015-05-20 17:00 A | 41 | 100% |  |  |
| 43 | 9.2.2 | **Kiosko Web** | 3d | 2015-05-21 08:00 A | 2015-05-25 17:00 A | 36 | 100% |  |  |
| 44 |  | Login | 0.38d | 2015-05-21 08:00 A | 2015-05-21 11:00 A |  | 100% |  |  |
| 45 |  | Pantalla Principal | 0.38d | 2015-05-21 11:00 A | 2015-05-21 15:00 A | 44 | 100% |  |  |
| 46 |  | Administración de Colecciones | 0.38d | 2015-05-21 15:00 A | 2015-05-22 09:00 A | 45 | 100% |  |  |
| 47 |  | Crear/Editar Colecciones | 0.38d | 2015-05-22 09:00 A | 2015-05-22 12:00 A | 46 | 100% |  |  |
| 48 |  | Cargar Archivos | 0.38d | 2015-05-22 13:00 A | 2015-05-22 16:00 A | 47 | 100% |  |  |
| 49 |  | Publicar Archivos | 0.38d | 2015-05-22 16:00 A | 2015-05-25 10:00 A | 48 | 100% |  |  |
| 50 |  | Mover Archivos | 0.38d | 2015-05-25 10:00 A | 2015-05-25 14:00 A | 49 | 100% |  |  |
| 51 |  | Configuración de límites de carga y descarga | 0.38d | 2015-05-25 14:00 A | 2015-05-25 17:00 A | 50 | 100% |  |  |
| 52 |  | Fin Diseño Gráfico | 0d | 2015-05-25 17:00 | 2015-05-25 17:00 | 29 |  | 46d |  |
| 53 |  | Disponibilidad QA | 0d | 2015-05-18 08:00 | 2015-05-18 08:00 |  |  | 52d | start no earlier than 2015-05-18 08:00 |
| 54 | 12 | **Planificación y Especificación de Pruebas** | 27.5d? | 2015-05-18 08:00 A | 2015-06-24 12:00 |  | 54% | 24.5d |  |
| 55 |  | LCP - Listado de Casos de Prueba (164) | 2d? | 2015-05-18 08:00 A | 2015-05-19 17:00 A |  | 100% |  |  |
| 56 |  | ECP - Especificación de Casos de Prueba (165) | 8d? | 2015-05-20 08:00 A | 2015-05-29 17:00 A | 55 | 100% |  |  |
| 57 |  | Actualización de LCP (237) | 2.5d | 2015-06-10 08:00 A | 2015-06-12 12:00 |  | 40% | 24.5d | start no earlier than 2015-06-10 08:00 |
| 58 |  | Actualización de ECP | 5d? | 2015-06-12 13:00 | 2015-06-19 12:00 | 57 |  | 24.5d |  |
| 59 |  | Plan de Pruebas Funcionales y de Rendimiento (163) | 2d? | 2015-06-19 13:00 | 2015-06-23 12:00 | 58 |  | 24.5d | start no earlier than 2015-06-08 08:00 |
| 60 |  | Pruebas No Funcionales (236) | 1d | 2015-06-23 13:00 | 2015-06-24 12:00 | 59 |  | 24.5d | start no earlier than 2015-06-15 08:00 |
| 61 | 13 | **Desarrollo** | 26.25d? | 2015-06-03 15:00 A | 2015-07-10 17:00 | 11 | 15% | 5d |  |
| 62 | 13.1 | **HTML** | 11.25d? | 2015-06-03 15:00 A | 2015-06-18 17:00 |  | 47% | 5d |  |
| 63 | 13.1.1 | **Estructura base HTML** | 2d? | 2015-06-03 15:00 A | 2015-06-05 15:00 A |  | 100% |  |  |
| 64 |  | Móvil (166) | 1d? | 2015-06-03 15:00 A | 2015-06-04 15:00 A |  | 100% |  |  |
| 65 |  | Web (167) | 1d? | 2015-06-04 15:00 A | 2015-06-05 15:00 A | 64 | 100% |  |  |
| 66 | 13.1.2 | **Páginas Móvil** | 3.75d? | 2015-06-05 15:00 A | 2015-06-11 12:00 | 63 | 87% | 10.5d |  |
| 67 |  | Inicio Session (169) | 1d? | 2015-06-05 15:00 A | 2015-06-08 15:00 A |  | 100% |  |  |
| 68 |  | Pagina Principal (170) | 0.25d? | 2015-06-08 15:00 A | 2015-06-08 17:00 A | 67 | 100% |  |  |
| 69 |  | Coleccion seleccionada (171) | 0.25d? | 2015-06-09 08:00 A | 2015-06-09 10:00 A | 68 | 100% |  |  |
| 70 |  | Opciones del archivo (172) | 0.25d? | 2015-06-09 10:00 A | 2015-06-09 12:00 A | 69 | 100% |  |  |

| ID | WBS | Task | Duration | Start | Finish | Predecessors | Complete | Total float |
| --- | --- | --- | --- | --- | --- | --- | --- | --- |
| 71 |  | Página de configuración (173) | 0.25d? | 2015-06-09 13:00 A | 2015-06-09 15:00 A | 70 | 100% |  |
| 72 |  | Panel de notificaciones (174) | 0.75d? | 2015-06-09 15:00 A | 2015-06-10 12:00 A | 71 | 100% |  |
| 73 |  | Sincronización (175) | 0.5d? | 2015-06-10 13:00 A | 2015-06-10 17:00 A | 72 | 100% |  |
| 74 |  | Revisión/Corrección con UX (176) | 0.5d? | 2015-06-11 08:00 | 2015-06-11 12:00 | 73 |  | 10.5d |
| 75 | 13.1.3 | **Páginas Web** | 3.5d? | 2015-06-11 13:00 | 2015-06-16 17:00 | 66 |  | 5d |
| 76 |  | Página Principal | 0.5d? | 2015-06-11 13:00 | 2015-06-11 17:00 |  |  | 5d |
| 77 |  | Inicio Session | 0.5d? | 2015-06-12 08:00 | 2015-06-12 12:00 | 76 |  | 5d |
| 78 |  | Mantener Colecciones | 1.5d? | 2015-06-12 13:00 | 2015-06-15 17:00 | 77 |  | 5d |
| 79 |  | Configurar limite de descarga | 0.5d? | 2015-06-16 08:00 | 2015-06-16 12:00 | 78 |  | 5d |
| 80 |  | Revisión/Corrección con UX | 0.5d? | 2015-06-16 13:00 | 2015-06-16 17:00 | 79 |  | 5d |
| 81 |  | Crear proyecto web angular | 2d? | 2015-06-17 08:00 | 2015-06-18 17:00 | 75 |  | 5d |
| 82 | 13.2 | **PhoneGap** | 15d | 2015-06-19 08:00 | 2015-07-10 17:00 | 62 |  | 5d |
| 83 |  | Creación proyecto base | 1d | 2015-06-19 08:00 | 2015-06-19 17:00 |  |  | 5d |
| 84 |  | Revisión de pares | 0.5d | 2015-06-22 08:00 | 2015-06-22 12:00 | 83 |  | 5d |
| 85 |  | Creación archivo de propiedades | 0.5d | 2015-06-22 13:00 | 2015-06-22 17:00 | 84 |  | 5d |
| 86 | 13.2.4 | **CUM-001: Autenticar usuario, CUM-011: Cerrar Sesión** | 2.5d | 2015-06-23 08:00 | 2015-06-25 12:00 | 85 |  | 5d |
| 87 |  | Consumir servicio | 0.25d | 2015-06-23 08:00 | 2015-06-23 10:00 |  |  | 5d |
| 88 | 13.2.4.2 | **Crear BD local en el móvil** | 1.5d | 2015-06-23 10:00 | 2015-06-24 15:00 | 87 |  | 5d |
| 89 |  | Plugin sqlite | 0.5d | 2015-06-23 10:00 | 2015-06-23 15:00 |  |  | 5d |
| 90 |  | Creación de estructura BD | 0.5d | 2015-06-23 15:00 | 2015-06-24 10:00 | 89 |  | 5d |
| 91 |  | Llenar paises con carga inicial / consumir servicio web de paises | 0.5d | 2015-06-24 10:00 | 2015-06-24 15:00 | 90 |  | 5d |
| 92 |  | Guardar sesión | 0.5d | 2015-06-24 15:00 | 2015-06-25 10:00 | 91, 88 |  | 5d |
| 93 |  | Cerrar sesión | 0.25d | 2015-06-25 10:00 | 2015-06-25 12:00 | 92 |  | 5d |
| 94 | 13.2.5 | **CUM-002: Sincronizar Datos, CUM-003: Mostrar Nuevo Contenido, CUM-008: Mostrar Notificación Nativa** | 4d | 2015-06-25 13:00 | 2015-07-02 12:00 | 86 |  | 5d |
| 95 |  | Consumir servicio (sincronización al inicio, primer plano y a demanda) | 0.75d | 2015-06-25 13:00 | 2015-06-26 10:00 |  |  | 5d |
| 96 |  | Guardar datos | 1d | 2015-06-26 10:00 | 2015-06-30 10:00 | 95 |  | 5d |
| 97 |  | Actualizar panel de notificacion | 0.5d | 2015-06-30 10:00 | 2015-06-30 15:00 | 96 |  | 5d |
| 98 |  | Actualizar panel de configuración (fecha ultima sincronización) | 0.25d | 2015-06-30 15:00 | 2015-06-30 17:00 | 97 |  | 5d |
| 99 |  | Configuración para notificaciones push (panel nativo) | 1d | 2015-07-01 08:00 | 2015-07-01 17:00 | 98 |  | 5d |
| 100 |  | Mensaje confirmación éxito/error sincronización por conexión de internet | 0.5d | 2015-07-02 08:00 | 2015-07-02 12:00 | 99 |  | 5d |
| 101 | 13.2.6 | **CUM-004: Navegar por Colecciones y Archivos, CUM-005: Ver Archivos** | 2.25d | 2015-07-02 13:00 | 2015-07-06 15:00 | 94 |  | 5d |
| 102 |  | Manejo de nagevabilidad | 0.5d | 2015-07-02 13:00 | 2015-07-02 17:00 |  |  | 5d |
| 103 |  | Abrir archivo | 1d | 2015-07-03 08:00 | 2015-07-03 17:00 | 102 |  | 5d |
| 104 |  | Actualizar panel de notificacion para eliminar visto | 0.5d | 2015-07-06 08:00 | 2015-07-06 12:00 | 103 |  | 5d |
| 105 |  | Mostrar mensaje de confirmación para descargar con red movil (validacion peso máximo) | 0.25d | 2015-07-06 13:00 | 2015-07-06 15:00 | 104 |  | 5d |
| 106 | 13.2.7 | **CUM-006: Descargar Archivo, CUM-010: Permitir uso de red móvil en descarga** | 0.75d | 2015-07-06 15:00 | 2015-07-07 12:00 | 101 |  | 5d |
| 107 |  | Guardar archivo | 0.25d | 2015-07-06 15:00 | 2015-07-06 17:00 |  |  | 5d |
| 108 |  | Marcar contenido como descargado | 0.25d | 2015-07-07 08:00 | 2015-07-07 10:00 | 107 |  | 5d |
| 109 |  | Mostrar mensaje de confirmación para descargar con red movil (validacion umbral) | 0.25d | 2015-07-07 10:00 | 2015-07-07 12:00 | 108 |  | 5d |
| 110 | 13.2.8 | **CUM-007: Eliminar Archivos** | 0.5d | 2015-07-07 13:00 | 2015-07-07 17:00 | 106 |  | 5d |
| 111 |  | Elimnar datos de BD y file system local | 0.5d | 2015-07-07 13:00 | 2015-07-07 17:00 |  |  | 5d |
| 112 | 13.2.9 | **CUM-009: Enviar métricas** | 1.5d | 2015-07-08 08:00 | 2015-07-09 12:00 | 110 |  | 5d |
| 113 |  | Enviar bitacora | 0.5d | 2015-07-08 08:00 | 2015-07-08 12:00 |  |  | 5d |
| 114 |  | Configurar google analytics | 0.5d | 2015-07-08 13:00 | 2015-07-08 17:00 | 113 |  | 5d |
| 115 |  | Colocar url de google analytics en las acciones | 0.5d | 2015-07-09 08:00 | 2015-07-09 12:00 | 114 |  | 5d |
| 116 |  | Pruebas desarrollador | 1d | 2015-07-09 13:00 | 2015-07-10 12:00 | 112 |  | 5d |
| 117 |  | Revisión de pares | 0.5d | 2015-07-10 13:00 | 2015-07-10 17:00 | 116 |  | 5d |
| 118 | 13.3 | **Web Services** | 15.25d? | 2015-06-03 15:00 A | 2015-06-24 17:00 |  | 21% | 5.5d |
| 119 | 13.3.1 | **Componentes Comunes** | 5.75d? | 2015-06-03 15:00 A | 2015-06-11 12:00 |  | 91% | 5.5d |
| 120 |  | Creación servicio web y estructura base (184) | 2d? | 2015-06-03 15:00 A | 2015-06-05 15:00 A |  | 100% |  |
| 121 |  | Implementación utilitarios base - parseo, conversión (186) | 1.75d? | 2015-06-05 15:00 A | 2015-06-09 12:00 A | 120 | 100% |  |
| 122 |  | EnviarBitacora (185) | 1d? | 2015-06-09 13:00 A | 2015-06-10 12:00 A | 121 | 100% |  |
| 123 |  | Log Errores | 1d? | 2015-06-10 13:00 A | 2015-06-11 12:00 | 122 | 50% | 5.5d |
| 124 | 13.3.2 | **Móvil** | 3.5d | 2015-06-11 13:00 | 2015-06-16 17:00 | 119 |  | 5.75d |
| 125 |  | ObtenerColeccionesArchivos | 2d | 2015-06-11 13:00 | 2015-06-15 12:00 |  |  | 5.75d |
| 126 |  | Registrar Sesión | 1d | 2015-06-15 13:00 | 2015-06-16 12:00 | 125 |  | 5.75d |
| 127 |  | CerrarSesión | 0.5d | 2015-06-16 13:00 | 2015-06-16 17:00 | 126 |  | 5.75d |
| 128 | 13.3.3 | **Web** | 9.5d | 2015-06-11 13:00 | 2015-06-24 17:00 |  |  | 5.5d |
| 129 |  | RegistrarSesion | 0.5d | 2015-06-17 08:00 | 2015-06-17 12:00 | 127 |  | 5.75d |
| 130 | 13.3.3.2 | **EnviarNotificacionPush** | 3.25d | 2015-06-17 13:00 | 2015-06-22 15:00 | 129 |  | 5.75d |
| 131 |  | Implementar módulo de notificaciones | 1d | 2015-06-17 13:00 | 2015-06-18 12:00 |  |  | 5.75d |
| 132 |  | Android | 0.75d | 2015-06-18 13:00 | 2015-06-19 10:00 | 131 |  | 5.75d |
| 133 |  | iOS | 0.75d | 2015-06-19 10:00 | 2015-06-19 17:00 | 132 |  | 5.75d |
| 134 |  | Windows Phone | 0.75d | 2015-06-22 08:00 | 2015-06-22 15:00 | 133 |  | 5.75d |
| 135 |  | ListarRoles | 0.75d | 2015-06-22 15:00 | 2015-06-23 12:00 | 130 |  | 5.75d |
| 136 |  | ListarPaises | 0.75d | 2015-06-23 13:00 | 2015-06-24 10:00 | 135 |  | 5.75d |
| 137 |  | CerrarSesion | 0.5d | 2015-06-24 10:00 | 2015-06-24 15:00 | 136 |  | 5.75d |
| 138 |  | ListarUmbrales | 0.5d | 2015-06-11 13:00 | 2015-06-11 17:00 | 119 |  | 5.5d |
| 139 |  | ObtenerUmbral | 0.5d | 2015-06-12 08:00 | 2015-06-12 12:00 | 138 |  | 5.5d |
| 140 |  | ActualizarUmbral | 0.5d | 2015-06-12 13:00 | 2015-06-12 17:00 | 139 |  | 5.5d |

| ID | WBS | Task | Duration | Start | Finish | Predecessors | Total float |
| --- | --- | --- | --- | --- | --- | --- | --- |
| 141 |  | ListarColecciones | 0.5d | 2015-06-15 08:00 | 2015-06-15 12:00 | 140 | 5.5d |
| 142 |  | InsertarColeccion | 0.5d | 2015-06-15 13:00 | 2015-06-15 17:00 | 141 | 5.5d |
| 143 |  | EliminarColeccion | 0.5d | 2015-06-16 08:00 | 2015-06-16 12:00 | 142 | 5.5d |
| 144 |  | ObtenerColeccion | 0.5d | 2015-06-16 13:00 | 2015-06-16 17:00 | 143 | 5.5d |
| 145 |  | ActualizarColeccion | 0.5d | 2015-06-17 08:00 | 2015-06-17 12:00 | 144 | 5.5d |
| 146 |  | ListarArchivos | 0.5d | 2015-06-17 13:00 | 2015-06-17 17:00 | 145 | 5.5d |
| 147 |  | InsertarArchivo | 1.5d | 2015-06-18 08:00 | 2015-06-19 12:00 | 146 | 5.5d |
| 148 |  | EliminarArchivo | 1.5d | 2015-06-19 13:00 | 2015-06-22 17:00 | 147 | 5.5d |
| 149 |  | ObtenerArchivo | 0.5d | 2015-06-23 08:00 | 2015-06-23 12:00 | 148 | 5.5d |
| 150 |  | ActualizarArchivo | 0.5d | 2015-06-23 13:00 | 2015-06-23 17:00 | 149 | 5.5d |
| 151 |  | ObtenerRutaOrigen | 0.5d | 2015-06-24 08:00 | 2015-06-24 12:00 | 150 | 5.5d |
| 152 |  | MoverArchivo | 0.5d | 2015-06-24 13:00 | 2015-06-24 17:00 | 151 | 5.5d |
| 153 | 13.4 | **Portal Web** | 8.5d? | 2015-06-25 08:00 | 2015-07-08 12:00 | 118 | 5.5d |
| 154 | 13.4.1 | **CUW-001: Iniciar sesión, CUW-007: Cerrar Sesión** | 2d? | 2015-06-25 08:00 | 2015-06-26 17:00 |  | 5.5d |
| 155 |  | Consumir servicio Yanbal | 0.75d | 2015-06-25 08:00 | 2015-06-25 15:00 |  | 5.5d |
| 156 |  | Registrar sesión | 0.5d | 2015-06-25 15:00 | 2015-06-26 10:00 | 155 | 5.5d |
| 157 |  | Listar paises | 0.5d? | 2015-06-26 10:00 | 2015-06-26 15:00 | 156 | 5.5d |
| 158 |  | Cerrar Sesión | 0.25d | 2015-06-26 15:00 | 2015-06-26 17:00 | 157 | 5.5d |
| 159 | 13.4.2 | **CUW-002: Configurar tamaño de Carga y Descarga** | 1.5d | 2015-06-30 08:00 | 2015-07-01 12:00 | 154 | 5.5d |
| 160 |  | Listar Limites de Carga y Descarga | 0.75d | 2015-06-30 08:00 | 2015-06-30 15:00 |  | 5.5d |
| 161 |  | Editar Limite Carga y Descarga | 0.75d | 2015-06-30 15:00 | 2015-07-01 12:00 | 160 | 5.5d |
| 162 | 13.4.3 | **CUW-006 Enviar Notificaciones** | 1d | 2015-07-01 13:00 | 2015-07-02 12:00 | 159 | 5.5d |
| 163 |  | Indicador de publicaciones pendientes | 0.5d | 2015-07-01 13:00 | 2015-07-01 17:00 |  | 5.5d |
| 164 |  | Validar mensaje | 0.25d | 2015-07-02 08:00 | 2015-07-02 10:00 | 163 | 5.5d |
| 165 |  | Enviar notificación push | 0.25d | 2015-07-02 10:00 | 2015-07-02 12:00 | 164 | 5.5d |
| 166 | 13.4.4 | **CUW-005 Mover Archivos** | 2.5d | 2015-07-02 13:00 | 2015-07-06 17:00 | 162 | 5.5d |
| 167 |  | Listar Coleccion | 1d | 2015-07-02 13:00 | 2015-07-03 12:00 |  | 5.5d |
| 168 |  | Mover Archivo | 1.5d | 2015-07-03 13:00 | 2015-07-06 17:00 | 167 | 5.5d |
| 169 | 13.4.5 | **CUW-003: Gestionar Colecciones** | 3d | 2015-06-25 08:00 | 2015-06-30 17:00 |  | 5.5d |
| 170 |  | Listar Coleccion | 0.75d | 2015-06-25 08:00 | 2015-06-25 15:00 |  | 5.5d |
| 171 |  | Crear Coleccion | 0.75d | 2015-06-25 15:00 | 2015-06-26 12:00 | 170 | 5.5d |
| 172 |  | Editar Coleccion | 0.75d | 2015-06-26 13:00 | 2015-06-30 10:00 | 171 | 5.5d |
| 173 |  | Ver Coleccion | 0.5d | 2015-06-30 10:00 | 2015-06-30 15:00 | 172 | 5.5d |
| 174 |  | Eliminar Coleccion | 0.25d | 2015-06-30 15:00 | 2015-06-30 17:00 | 173 | 5.5d |
| 175 | 13.4.6 | **CUW-004: Gestionar Archivos** | 4.5d | 2015-07-01 08:00 | 2015-07-07 12:00 | 169 | 5.5d |
| 176 |  | Listar Archivo | 1d | 2015-07-01 08:00 | 2015-07-01 17:00 |  | 5.5d |
| 177 |  | Crear Archivo | 1d | 2015-07-02 08:00 | 2015-07-02 17:00 | 176 | 5.5d |
| 178 |  | Editar Archivo | 0.5d | 2015-07-03 08:00 | 2015-07-03 12:00 | 177 | 5.5d |
| 179 |  | Ver detalle Archivo | 0.5d | 2015-07-03 13:00 | 2015-07-03 17:00 | 178 | 5.5d |
| 180 |  | Listar Roles | 0.5d | 2015-07-06 08:00 | 2015-07-06 12:00 | 179 | 5.5d |
| 181 |  | Validar limite de Carga de archivo | 0.25d | 2015-07-06 13:00 | 2015-07-06 15:00 | 180 | 5.5d |
| 182 |  | Eliminar Archivo | 0.75d | 2015-07-06 15:00 | 2015-07-07 12:00 | 181 | 5.5d |
| 183 |  | Seguridad (SSL) | 0.5d? | 2015-07-07 08:00 | 2015-07-07 12:00 | 166 | 5.5d |
| 184 |  | Pruebas de desarrollador | 0.5d | 2015-07-07 13:00 | 2015-07-07 17:00 | 183, 175 | 5.5d |
| 185 |  | Revisión de pares | 0.5d | 2015-07-08 08:00 | 2015-07-08 12:00 | 184 | 5.5d |
| 186 |  | Pruebas integración | 1d? | 2015-07-08 13:00 | 2015-07-09 12:00 | 153 | 5.5d |
| 187 |  | Configuración Ambientes de QA | 1d? | 2015-07-09 13:00 | 2015-07-10 12:00 | 186 | 5.5d |
| 188 | 14 | **Aseguramiento de la calidad** | 13d? | 2015-07-06 08:00 | 2015-07-22 17:00 |  | 5d |
| 189 | 14.1 | **Pruebas Funcionales** | 8d | 2015-07-13 08:00 | 2015-07-22 17:00 | 61 | 5d |
| 190 | 14.1.1 | **Móvil** | 8d | 2015-07-13 08:00 | 2015-07-22 17:00 |  | 5d |
| 191 | 14.1.1.1 | **Ejecución en Tablet** | 7d | 2015-07-13 08:00 | 2015-07-21 17:00 |  | 6d |
| 192 |  | Ejecución en Samsung de 10.1" /SO Android 4.1.2 (Principal) | 3d | 2015-07-13 08:00 | 2015-07-15 17:00 |  | 6d |
| 193 |  | Ejecución en Lenovo 7" / SO Android 4.2.2 (Secundario) | 1d | 2015-07-16 08:00 | 2015-07-16 17:00 | 192 | 6d |
| 194 |  | Tablet AOC / SO: Android 4.1.1 (Secundario) | 1d | 2015-07-17 08:00 | 2015-07-17 17:00 | 193 | 6d |
| 195 |  | Ejecución en Ipad SO 7 (Secundario) | 1d | 2015-07-20 08:00 | 2015-07-20 17:00 | 194 | 6d |
| 196 |  | Ejecución en Ipad SO 8 (Secundario) | 1d | 2015-07-21 08:00 | 2015-07-21 17:00 | 195 | 6d |
| 197 | 14.1.1.2 | **Ejecución en SmartPhone** | 8d | 2015-07-13 08:00 | 2015-07-22 17:00 |  | 5d |
| 198 |  | Nokia Lumia 520 / SO: Windows Phone 8.0 (Principal) | 3d | 2015-07-13 08:00 | 2015-07-15 17:00 |  | 5d |
| 199 |  | Ejecución en Samsung Galaxy Chat/SO -SO Android 4.1.2 (secundario) | 1d | 2015-07-16 08:00 | 2015-07-16 17:00 | 198 | 5d |
| 200 |  | Samsung Galaxy S III Mini / SO: Android 4.1.2 (Principal) | 1d | 2015-07-17 08:00 | 2015-07-17 17:00 | 199 | 5d |
| 201 |  | Ejecución en Iphone 4 / iSO 7 (Principal) | 1d | 2015-07-20 08:00 | 2015-07-20 17:00 | 200 | 5d |
| 202 |  | Ejecución en Iphone 5 / iSO 7 (Secundario) | 1d | 2015-07-21 08:00 | 2015-07-21 17:00 | 201 | 5d |
| 203 |  | Ejecución en Iphone 6 / iSO 7 (Secundario) | 1d | 2015-07-22 08:00 | 2015-07-22 17:00 | 202 | 5d |
| 204 | 14.1.2 | **Web** | 5d | 2015-07-13 08:00 | 2015-07-17 17:00 |  | 8d |
| 205 | 14.1.2.1 | **Ejecución en Web Browser - IE9 (Principal)** | 3.75d | 2015-07-13 08:00 | 2015-07-16 15:00 |  | 8d |
| 206 |  | Ejecución de casos de prueba funcionales | 2.25d | 2015-07-13 08:00 | 2015-07-15 10:00 |  | 8d |
| 207 |  | Reporte de errores | 0.5d | 2015-07-15 10:00 | 2015-07-15 15:00 | 206 | 8d |
| 208 |  | Verificación de errores | 0.5d | 2015-07-15 15:00 | 2015-07-16 10:00 | 207 | 8d |
| 209 |  | Pruebas exploratoria | 0.5d | 2015-07-16 10:00 | 2015-07-16 15:00 | 208 | 8d |
| 210 |  | Ejecución en Web Browser - Chrome 40 (Secundario) | 1.25d | 2015-07-16 15:00 | 2015-07-17 17:00 | 205 | 8d |

| ID | WBS | Task | Duration | Start | Finish | Predecessors | Total float |
| --- | --- | --- | --- | --- | --- | --- | --- |
| 211 | 14.2 | **Soporte a Pruebas Funcionales (Resolución de Bugs)** | 8d | 2015-07-13 08:00 | 2015-07-22 17:00 |  | 5d |
| 212 |  | Móvil | 8d | 2015-07-13 08:00 | 2015-07-22 17:00 | 190SS | 5d |
| 213 |  | Web | 8d | 2015-07-13 08:00 | 2015-07-22 17:00 | 204SS | 5d |
| 214 | 14.3 | **Pruebas de Rendimiento** | 9.5d? | 2015-07-06 08:00 | 2015-07-17 12:00 |  | 8.5d |
| 215 |  | Creación de Scripts (Flujo: 6WS) | 5d? | 2015-07-06 08:00 | 2015-07-13 08:00 | 216SF | 13d |
| 216 | 14.3.2 | **Ejecución de Pruebas** | 3d? | 2015-07-13 08:00 | 2015-07-15 17:00 | 61 | 8.5d |
| 217 |  | Preparación del Ambiente | 0.75d? | 2015-07-13 08:00 | 2015-07-13 15:00 |  | 8.5d |
| 218 |  | Prueba de Ambiente | 0.25d? | 2015-07-13 15:00 | 2015-07-13 17:00 | 217 | 8.5d |
| 219 |  | Ejecución prueba de carga | 2d? | 2015-07-14 08:00 | 2015-07-15 17:00 | 218 | 8.5d |
| 220 | 14.3.3 | **Documentación** | 1.5d? | 2015-07-16 08:00 | 2015-07-17 12:00 | 216 | 8.5d |
| 221 |  | Parsing Logs | 0.5d? | 2015-07-16 08:00 | 2015-07-16 12:00 |  | 8.5d |
| 222 |  | Análisis y Notas Iniciales | 0.5d? | 2015-07-16 13:00 | 2015-07-16 17:00 | 221 | 8.5d |
| 223 |  | Creación de documento de resultados | 0.5d? | 2015-07-17 08:00 | 2015-07-17 12:00 | 222 | 8.5d |
| 224 |  | Soporte a Pruebas de Rendimiento | 3d? | 2015-07-13 08:00 | 2015-07-15 17:00 | 216SS | 10d |
| 225 | 15 | **Documentación** | 10d | 2015-07-13 08:00 | 2015-07-24 17:00 | 211SS | 0d |
| 226 | 15.1 | **Móvil** | 10d | 2015-07-13 08:00 | 2015-07-24 17:00 |  | 0d |
| 227 |  | Release notes | 1d | 2015-07-13 08:00 | 2015-07-13 17:00 |  | 0d |
| 228 |  | Manual de soporte | 3d | 2015-07-14 08:00 | 2015-07-16 17:00 | 227 | 0d |
| 229 |  | Manual de instalación | 4d | 2015-07-17 08:00 | 2015-07-22 17:00 | 228 | 0d |
| 230 |  | Manual de usuario | 2d | 2015-07-23 08:00 | 2015-07-24 17:00 | 229 | 0d |
| 231 | 15.2 | **Web** | 10d | 2015-07-13 08:00 | 2015-07-24 17:00 |  | 0d |
| 232 |  | Release notes | 1d | 2015-07-13 08:00 | 2015-07-13 17:00 |  | 0d |
| 233 |  | Manual de soporte | 3d | 2015-07-14 08:00 | 2015-07-16 17:00 | 232 | 0d |
| 234 |  | Manual de instalación | 4d | 2015-07-17 08:00 | 2015-07-22 17:00 | 233 | 0d |
| 235 |  | Manual de usuario | 2d | 2015-07-23 08:00 | 2015-07-24 17:00 | 234 | 0d |
| 236 | 16 | **Generación de Binarios** | 1d | 2015-07-27 08:00 | 2015-07-27 17:00 |  | 0d |
| 237 |  | Portal Web / Web Services | 1d | 2015-07-27 08:00 | 2015-07-27 17:00 | 231 | 0d |
| 238 |  | Aplicaciones Moviles (iOS, Android, Windows Phone) | 1d | 2015-07-27 08:00 | 2015-07-27 17:00 | 226 | 0d |
| 239 | 17 | **Despliegue Ambientes Certificación Yanbal** | 2d | 2015-07-30 08:00 | 2015-07-31 17:00 | 236 | 0d |
| 240 |  | Móvil | 2d | 2015-07-30 08:00 | 2015-07-31 17:00 |  | 0d |
| 241 |  | Web | 2d | 2015-07-30 08:00 | 2015-07-31 17:00 |  | 0d |

## Version 2 (data date 2015-06-11, saved 2015-06-19, file Yanbal - Kiosko V2 - 20150618.mpp)

Last finish 2015-07-31 → 2015-08-04 (+4d). Complete tasks 54 → 64.

Added:

| ID | Task | Duration | Start | Finish | Predecessors | Constraint | Resources |
| --- | --- | --- | --- | --- | --- | --- | --- |
| 50 | **Preparacion de Ambientes de Integracion Continua** | 3d | 2015-06-12 08:00 A | 2015-06-16 17:00 | 58, 111 |  |  |
| 51 | Instalacion y configuracion ambiente DEV y QA | 1.5d | 2015-06-12 08:00 A | 2015-06-15 12:00 A |  |  | Alex; Lennin |
| 52 | Creacion de Jobs en Jenkins | 0.75d | 2015-06-15 13:00 A | 2015-06-16 10:00 | 51 |  | Alex; Lennin |
| 53 | Creacion y configuracion instancia Crucible | 0.75d | 2015-06-16 10:00 A | 2015-06-16 17:00 | 52 |  | Alex; Lennin |
| 179 | Configuración ambientes QA | 1d | 2015-07-15 08:00 | 2015-07-15 17:00 | 178 |  | Alex; Lennin; Pier |
| 180 | Sesion Demo 1 | 0d | 2015-07-01 15:00 | 2015-07-01 15:00 | 86 |  |  |
| 181 | Sesion Demo 2 | 0d | 2015-06-03 15:00 | 2015-06-03 15:00 |  |  |  |
| 189 | **Pruebas Funcionales y No Funcionales** | 6d | 2015-07-16 08:00 | 2015-07-23 17:00 | 183, 49 |  |  |
| 212 | **Pruebas No Funcionales** | 6d | 2015-07-16 08:00 | 2015-07-23 17:00 | 49 |  |  |
| 213 | **SmartPhone** | 3d | 2015-07-16 08:00 | 2015-07-20 17:00 |  |  |  |
| 214 | Nokia Lumia 520 / SO: Windows Phone 8.0 (Principal) | 3d | 2015-07-16 08:00 | 2015-07-20 17:00 |  |  | QAI - 7 |
| 215 | Samsung Galaxy S III Mini / SO: Android 4.1.2 (Principal) | 3d | 2015-07-16 08:00 | 2015-07-20 17:00 |  |  | Tester - 5 |
| 216 | Iphone 4 / iOS 7 (Principal) | 3d | 2015-07-16 08:00 | 2015-07-20 17:00 |  |  | Tester - 6 |
| 217 | **Tablet** | 6d | 2015-07-16 08:00 | 2015-07-23 17:00 |  |  |  |
| 218 | Samsung de 10.1" /SO Android 4.1.2 (Principal) | 3d | 2015-07-16 08:00 | 2015-07-20 17:00 |  |  | Tester - 7 |
| 219 | Ipad SO 7 (Principal) | 3d | 2015-07-21 08:00 | 2015-07-23 17:00 | 214 |  | QAI - 7 |
| 220 | **Pruebas de Regresion** | 1.5d | 2015-07-24 08:00 | 2015-07-27 12:00 | 189 |  |  |
| 221 | Smartphone | 1.5d | 2015-07-24 08:00 | 2015-07-27 12:00 |  |  | QAI - 1 |
| 222 | Tablet | 1.5d | 2015-07-24 08:00 | 2015-07-27 12:00 |  |  | QAI - 2 |
| 252 | Instalacion y Configuracion de solucion | 1.5d | 2015-08-03 13:00 | 2015-08-04 17:00 |  |  | Yanbal |
| 254 | **Certificacion Yanbal** | 0d | 2015-08-04 17:00 | 2015-08-04 17:00 | 251 |  |  |
| 255 | Ejecucion de Pruebas Equipo Yanbal | 0d | 2015-08-04 17:00 | 2015-08-04 17:00 |  |  |  |
| 256 | Soporte Avantica | 0d | 2015-08-04 17:00 | 2015-08-04 17:00 | 255SS |  |  |
| 259 | Disponibilidad QA - Actualizaciones | 0d | 2015-06-08 08:00 | 2015-06-08 08:00 |  | start no earlier than 2015-06-08 08:00 |  |
| 263 | Fin de Desarrollo (20%) | 0d | 2015-07-15 17:00 | 2015-07-15 17:00 | 49 |  |  |
| 264 | Entrega de la Solución (30%) | 0d | 2015-08-03 12:00 | 2015-08-03 12:00 | 248 |  |  |
| 265 | Aceptación del proyecto (10%) | 0d | 2015-08-04 17:00 | 2015-08-04 17:00 | 254 |  |  |
| 266 | Fin ejecucion del proyecto / Inicio de Garantia de Producto | 0d | 2015-08-04 17:00 | 2015-08-04 17:00 | 265 |  |  |

Removed: 60 Pruebas No Funcionales (236); 187 Configuración Ambientes de QA; 224 Soporte a Pruebas de Rendimiento

Changed:

| ID | Task | Start | Finish | Duration | Complete | Total float | Predecessors | Other |
| --- | --- | --- | --- | --- | --- | --- | --- | --- |
| 1 | Gestión del proyecto |  | 2015-07-31 17:00 → 2015-08-04 17:00 (+4d) | 75d → 77d | 55% → 61% |  |  | resources PM [40%] → Manuel Galagarza [40%] |
| 2 | Sesión de Inicio de Proyecto (KickOff) |  |  |  |  |  |  | resources SEII - Mobile; SEII - Web → Pier; Lennin |
| 3 | **Análisis** |  |  | 15.25d? → 15.25d |  |  |  |  |
| 4 | Reuniones (124) |  |  | 2d? → 2d |  |  |  | resources SEII - Mobile; SEII - Web → Pier; Lennin |
| 5 | Especificación de requerimientos funcionales (125) |  |  | 1d? → 1d |  |  |  | resources SEII - Mobile; SEII - Web → Pier; Lennin |
| 6 | Creación de Wireframes (126) |  |  | 4d? → 4d |  |  |  | resources SEII - Mobile; SEII - Web → Pier; Lennin |
| 7 | Especificación de casos de uso (127) |  |  | 3d? → 3d |  |  |  | resources SEII - Mobile; SEII - Web → Pier; Lennin |
| 8 | Matriz de trazabilidad: requerimientos / casos de uso (128) |  |  | 0.25d? → 0.25d |  |  |  | resources SEII - Mobile; SEII - Web → Pier; Lennin |
| 9 | Modificación de documentos (144) |  |  | 5d? → 5d |  |  |  | resources SEII - Mobile [50%]; SEII - Web [50%] → Pier [50%]; Lennin [50%] |
| 10 | **Diseño Técnico** |  |  | 25d? → 25d |  |  |  |  |
| 11 | Reuniones (129) |  |  | 5d? → 5d |  |  |  | resources SEII - Mobile [50%]; SEII - Web [50%] → Pier [50%]; Lennin [50%] |
| 12 | Catalogo de servicios web a crear / consumir (137) |  |  | 1.5d? → 1.5d |  |  |  | resources SEII - Mobile; SEII - Web → Pier; Lennin |
| 13 | Configurar ambiente de desarrollo (141 y 142) |  |  | 2d? → 2d |  |  |  | resources SEII - Mobile; SEII - Web → Pier; Lennin |
| 14 | Revisión documentación Yanbal (143) |  |  | 0.25d? → 0.25d |  |  |  | resources SEII - Mobile; SEII - Web → Pier; Lennin |
| 15 | Definir estándares de desarrollo (130 y 161) |  |  | 0.25d? → 0.25d |  |  |  | resources SEII - Mobile; SEII - Web → Pier; Lennin |
| 16 | Requerimientos no funcionales (131 y 162) |  |  | 0.25d? → 0.25d |  |  |  | resources SEII - Mobile; SEII - Web → Pier; Lennin |
| 17 | Arquitectura (132) |  |  | 1d? → 1d |  |  |  | resources SEII - Mobile; SEII - Web → Pier; Lennin |
| 18 | Base de Datos (136 y 160) |  |  | 1d? → 1d |  |  |  | resources SEII - Mobile; SEII - Web → Pier; Lennin |
| 19 | Especificación Técnica de la Solución (151 y 156) |  |  | 1.75d? → 1.75d |  |  |  | resources SEII - Mobile; SEII - Web → Pier; Lennin |
| 20 | Diagrama de Clases (148 y 149) |  |  | 1d? → 1d |  |  |  | resources SEII - Mobile; SEII - Web → Pier; Lennin |
| 21 | Mapa de Navegación (150 y 155) |  |  | 0.12d? → 0.12d |  |  |  | resources SEII - Mobile; SEII - Web → Pier; Lennin |
| 22 | Perfiles del sistema (153 y 158) |  |  | 0.12d? → 0.12d |  |  |  | resources SEII - Mobile; SEII - Web → Pier; Lennin |
| 23 | Especificación de pantallas (152 y 157) |  |  | 0.75d? → 0.75d |  |  |  | resources SEII - Mobile; SEII - Web → Pier; Lennin |
| 24 | Modificación de documentos (205 y 206) |  |  | 10d? → 10d |  |  |  | resources SEII - Mobile [75%]; SEII - Web [75%] → Pier [75%]; Lennin [75%] |
| 25 | Configuración Ambiente local de desarrollo |  |  | 10d? → 10d |  |  |  | resources SEII - Mobile [25%]; SEII - Web [25%] → Pier [25%]; Lennin [25%] |
| 26 | **Diseño Gráfico** |  |  |  |  |  | 257 → none |  |
| 28 | Reuniones con el cliente (información inicial) |  |  |  |  |  |  | resources UX → Melissa Patroni |
| 29 | Elaboración de propuesta grafica (2 Pág. Maestras) Móvil |  |  |  |  |  |  | resources UX → Melissa Patroni |
| 30 | Elaboración de propuesta grafica (2 Pág. Maestras) Web |  |  |  |  |  |  | resources UX → Melissa Patroni |
| 31 | Elaboración de assets y cortes de imágenes |  |  |  |  |  |  | resources UX → Melissa Patroni |
| 34 | Login |  |  |  |  |  |  | resources UX → Melissa Patroni |
| 35 | Página Principal |  |  |  |  |  |  | resources UX → Melissa Patroni |
| 36 | Ver Colección |  |  |  |  |  |  | resources UX → Melissa Patroni |
| 37 | Notificaciones |  |  |  |  |  |  | resources UX → Melissa Patroni |
| 38 | Configuración |  |  |  |  |  |  | resources UX → Melissa Patroni |
| 39 | Ver/Descargar/Eliminar Archivo |  |  |  |  |  |  | resources UX → Melissa Patroni |
| 41 | Login |  |  |  |  |  |  | resources UX → Melissa Patroni |
| 42 | Pantalla Principal |  |  |  |  |  |  | resources UX → Melissa Patroni |
| 43 | Administración de Colecciones |  |  |  |  |  |  | resources UX → Melissa Patroni |
| 44 | Crear/Editar Colecciones |  |  |  |  |  |  | resources UX → Melissa Patroni |
| 45 | Cargar Archivos |  |  |  |  |  |  | resources UX → Melissa Patroni |
| 46 | Publicar Archivos |  |  |  |  |  |  | resources UX → Melissa Patroni |
| 47 | Mover Archivos |  |  |  |  |  |  | resources UX → Melissa Patroni |
| 48 | Configuración de límites de carga y descarga |  |  |  |  |  |  | resources UX → Melissa Patroni |
| 49 | **Desarrollo** |  | 2015-07-10 17:00 → 2015-07-15 17:00 (+5d) | 26.25d? → 29.25d | 15% → 32% | 5d → 0d |  |  |
| 54 | **HTML** |  | 2015-06-18 17:00 → 2015-06-19 17:00 (+1d) | 11.25d? → 12.25d | 47% → 92% | 5d → 0d |  |  |
| 55 | **Estructura base HTML** |  |  | 2d? → 2d |  |  |  |  |
| 56 | Móvil (166) |  |  | 1d? → 1d |  |  |  | resources SEII - Mobile → Pier |
| 57 | Web (167) |  |  | 1d? → 1d |  |  |  | resources SEII - Mobile → Pier |
| 58 | **Páginas Móvil** |  | 2015-06-11 12:00 → 2015-06-11 17:00 A | 3.75d? → 4.25d | 87% → 100% | 10.5d → none |  |  |
| 59 | Inicio Session (169) |  |  | 1d? → 1d |  |  |  | resources SEII - Mobile → Pier |
| 60 | Pagina Principal (170) |  |  | 0.25d? → 0.25d |  |  |  | resources SEII - Mobile → Pier |
| 61 | Coleccion seleccionada (171) |  |  | 0.25d? → 0.25d |  |  |  | resources SEII - Mobile → Pier |
| 62 | Opciones del archivo (172) |  |  | 0.25d? → 0.25d |  |  |  | resources SEII - Mobile → Pier |
| 63 | Página de configuración (173) |  |  | 0.25d? → 0.25d |  |  |  | resources SEII - Mobile → Pier |
| 64 | Panel de notificaciones (174) |  |  | 0.75d? → 0.75d |  |  |  | resources SEII - Mobile → Pier |
| 65 | Sincronización (175) |  |  | 0.5d? → 0.5d |  |  |  | resources SEII - Mobile → Pier |
| 66 | Revisión/Corrección con UX (176) | 2015-06-11 08:00 A | 2015-06-11 12:00 → 2015-06-11 17:00 A | 0.5d? → 1d | 0% → 100% | 10.5d → none |  | resources SEII - Mobile → Pier |
| 67 | **Páginas Web** | 2015-06-11 13:00 → 2015-06-12 08:00 A (+1d) | 2015-06-16 17:00 → 2015-06-17 17:00 (+1d) | 3.5d? → 4d | 0% → 88% | 5d → 1.5d |  |  |
| 68 | Página Principal | 2015-06-11 13:00 → 2015-06-12 08:00 A (+1d) | 2015-06-11 17:00 → 2015-06-12 15:00 A (+1d) | 0.5d? → 0.75d | 0% → 100% | 5d → none |  | resources SEII - Mobile → Pier |
| 69 | Inicio Session | 2015-06-12 08:00 → 2015-06-12 15:00 A | 2015-06-12 12:00 → 2015-06-15 12:00 A (+3d) | 0.5d? → 0.75d | 0% → 100% | 5d → none |  | resources SEII - Mobile → Pier |
| 70 | Mantener Colecciones | 2015-06-12 13:00 → 2015-06-15 13:00 A (+3d) | 2015-06-15 17:00 → 2015-06-16 17:00 A (+1d) | 1.5d? → 1.5d | 0% → 100% | 5d → none |  | resources SEII - Mobile → Pier |
| 71 | Configurar limite de descarga | 2015-06-16 08:00 → 2015-06-17 08:00 A (+1d) | 2015-06-16 12:00 → 2015-06-17 12:00 A (+1d) | 0.5d? → 0.5d | 0% → 100% | 5d → none |  | resources SEII - Mobile → Pier |
| 72 | Revisión/Corrección con UX | 2015-06-16 13:00 → 2015-06-17 13:00 (+1d) | 2015-06-16 17:00 → 2015-06-17 17:00 (+1d) | 0.5d? → 0.5d |  | 5d → 1.5d |  | resources SEII - Mobile → Pier |
| 73 | Crear proyecto web angular | 2015-06-17 08:00 → 2015-06-18 08:00 A (+1d) | 2015-06-18 17:00 → 2015-06-19 17:00 (+1d) | 2d? → 2d | 0% → 75% | 5d → 0d |  | resources SEII - Mobile → Pier |
| 74 | **PhoneGap** | 2015-06-19 08:00 → 2015-06-22 08:00 (+3d) | 2015-07-10 17:00 → 2015-07-13 17:00 (+3d) |  |  | 5d → 0d |  |  |
| 75 | Creación proyecto base | 2015-06-19 08:00 → 2015-06-22 08:00 (+3d) | 2015-06-19 17:00 → 2015-06-22 17:00 (+3d) |  |  | 5d → 0d |  | resources SEII - Mobile → Pier |
| 76 | Revisión de pares | 2015-06-22 08:00 → 2015-06-23 08:00 (+1d) | 2015-06-22 12:00 → 2015-06-23 12:00 (+1d) |  |  | 5d → 0d |  | resources SEII - Mobile → Pier |
| 77 | Creación archivo de propiedades | 2015-06-22 13:00 → 2015-06-23 13:00 (+1d) | 2015-06-22 17:00 → 2015-06-23 17:00 (+1d) |  |  | 5d → 0d |  | resources SEII - Mobile → Pier |
| 78 | **CUM-001: Autenticar usuario, CUM-011: Cerrar Sesión** | 2015-06-23 08:00 → 2015-06-24 08:00 (+1d) | 2015-06-25 12:00 → 2015-06-26 12:00 (+1d) |  |  | 5d → 0d |  |  |

| ID | Task | Start | Finish | Duration | Complete | Total float | Predecessors | Other |
| --- | --- | --- | --- | --- | --- | --- | --- | --- |
| 79 | Consumir servicio | 2015-06-23 08:00 → 2015-06-24 08:00 (+1d) | 2015-06-23 10:00 → 2015-06-24 10:00 (+1d) |  |  | 5d → 0d |  | resources SEII - Mobile → Pier |
| 80 | **Crear BD local en el móvil** | 2015-06-23 10:00 → 2015-06-24 10:00 (+1d) | 2015-06-24 15:00 → 2015-06-25 15:00 (+1d) |  |  | 5d → 0d |  |  |
| 81 | Plugin sqlite | 2015-06-23 10:00 → 2015-06-24 10:00 (+1d) | 2015-06-23 15:00 → 2015-06-24 15:00 (+1d) |  |  | 5d → 0d |  | resources SEII - Mobile → Pier |
| 82 | Creación de estructura BD | 2015-06-23 15:00 → 2015-06-24 15:00 (+1d) | 2015-06-24 10:00 → 2015-06-25 10:00 (+1d) |  |  | 5d → 0d |  | resources SEII - Mobile → Pier |
| 83 | Llenar paises con carga inicial / consumir servicio web de paises | 2015-06-24 10:00 → 2015-06-25 10:00 (+1d) | 2015-06-24 15:00 → 2015-06-25 15:00 (+1d) |  |  | 5d → 0d |  | resources SEII - Mobile → Pier |
| 84 | Guardar sesión | 2015-06-24 15:00 → 2015-06-25 15:00 (+1d) | 2015-06-25 10:00 → 2015-06-26 10:00 (+1d) |  |  | 5d → 0d |  | resources SEII - Mobile → Pier |
| 85 | Cerrar sesión | 2015-06-25 10:00 → 2015-06-26 10:00 (+1d) | 2015-06-25 12:00 → 2015-06-26 12:00 (+1d) |  |  | 5d → 0d |  | resources SEII - Mobile → Pier |
| 86 | **CUM-004: Navegar por Colecciones y Archivos, CUM-005: Ver Archivos** | 2015-07-02 13:00 → 2015-06-26 13:00 (-6d) | 2015-07-06 15:00 → 2015-07-01 15:00 (-5d) |  |  | 5d → 0d | 91 → 78 |  |
| 87 | Manejo de nagevabilidad | 2015-07-02 13:00 → 2015-06-26 13:00 (-6d) | 2015-07-02 17:00 → 2015-06-26 17:00 (-6d) |  |  | 5d → 0d |  | resources SEII - Mobile → Pier |
| 88 | Abrir archivo | 2015-07-03 08:00 → 2015-06-30 08:00 (-3d) | 2015-07-03 17:00 → 2015-06-30 17:00 (-3d) |  |  | 5d → 0d |  | resources SEII - Mobile → Pier |
| 89 | Actualizar panel de notificacion para eliminar visto | 2015-07-06 08:00 → 2015-07-01 08:00 (-5d) | 2015-07-06 12:00 → 2015-07-01 12:00 (-5d) |  |  | 5d → 0d |  | resources SEII - Mobile → Pier |
| 90 | Mostrar mensaje de confirmación para descargar con red movil (validacion peso máximo) | 2015-07-06 13:00 → 2015-07-01 13:00 (-5d) | 2015-07-06 15:00 → 2015-07-01 15:00 (-5d) |  |  | 5d → 0d |  | resources SEII - Mobile → Pier |
| 91 | **CUM-002: Sincronizar Datos, CUM-003: Mostrar Nuevo Contenido, CUM-008: Mostrar Notificación Nativa** | 2015-06-25 13:00 → 2015-07-01 15:00 (+6d) | 2015-07-02 12:00 → 2015-07-07 15:00 (+5d) |  |  | 5d → 0d | 78 → 86 |  |
| 92 | Consumir servicio (sincronización al inicio, primer plano y a demanda) | 2015-06-25 13:00 → 2015-07-01 15:00 (+6d) | 2015-06-26 10:00 → 2015-07-02 12:00 (+6d) |  |  | 5d → 0d |  | resources SEII - Mobile → Pier |
| 93 | Guardar datos | 2015-06-26 10:00 → 2015-07-02 13:00 (+6d) | 2015-06-30 10:00 → 2015-07-03 12:00 (+3d) |  |  | 5d → 0d |  | resources SEII - Mobile → Pier |
| 94 | Actualizar panel de notificacion | 2015-06-30 10:00 → 2015-07-03 13:00 (+3d) | 2015-06-30 15:00 → 2015-07-03 17:00 (+3d) |  |  | 5d → 0d |  | resources SEII - Mobile → Pier |
| 95 | Actualizar panel de configuración (fecha ultima sincronización) | 2015-06-30 15:00 → 2015-07-06 08:00 (+6d) | 2015-06-30 17:00 → 2015-07-06 10:00 (+6d) |  |  | 5d → 0d |  | resources SEII - Mobile → Pier |
| 96 | Configuración para notificaciones push (panel nativo) | 2015-07-01 08:00 → 2015-07-06 10:00 (+5d) | 2015-07-01 17:00 → 2015-07-07 10:00 (+6d) |  |  | 5d → 0d |  | resources SEII - Mobile → Pier |
| 97 | Mensaje confirmación éxito/error sincronización por conexión de internet | 2015-07-02 08:00 → 2015-07-07 10:00 (+5d) | 2015-07-02 12:00 → 2015-07-07 15:00 (+5d) |  |  | 5d → 0d |  | resources SEII - Mobile → Pier |
| 98 | **CUM-006: Descargar Archivo, CUM-010: Permitir uso de red móvil en descarga** | 2015-07-06 15:00 → 2015-07-07 15:00 (+1d) | 2015-07-07 12:00 → 2015-07-08 12:00 (+1d) |  |  | 5d → 0d | 86 → 91 |  |
| 99 | Guardar archivo | 2015-07-06 15:00 → 2015-07-07 15:00 (+1d) | 2015-07-06 17:00 → 2015-07-07 17:00 (+1d) |  |  | 5d → 0d |  | resources SEII - Mobile → Pier |
| 100 | Marcar contenido como descargado | 2015-07-07 08:00 → 2015-07-08 08:00 (+1d) | 2015-07-07 10:00 → 2015-07-08 10:00 (+1d) |  |  | 5d → 0d |  | resources SEII - Mobile → Pier |
| 101 | Mostrar mensaje de confirmación para descargar con red movil (validacion umbral) | 2015-07-07 10:00 → 2015-07-08 10:00 (+1d) | 2015-07-07 12:00 → 2015-07-08 12:00 (+1d) |  |  | 5d → 0d |  | resources SEII - Mobile → Pier |
| 102 | **CUM-007: Eliminar Archivos** | 2015-07-07 13:00 → 2015-07-08 13:00 (+1d) | 2015-07-07 17:00 → 2015-07-08 17:00 (+1d) |  |  | 5d → 0d |  |  |
| 103 | Elimnar datos de BD y file system local | 2015-07-07 13:00 → 2015-07-08 13:00 (+1d) | 2015-07-07 17:00 → 2015-07-08 17:00 (+1d) |  |  | 5d → 0d |  | resources SEII - Mobile → Pier |
| 104 | **CUM-009: Enviar métricas** | 2015-07-08 08:00 → 2015-07-09 08:00 (+1d) | 2015-07-09 12:00 → 2015-07-10 12:00 (+1d) |  |  | 5d → 0d |  |  |
| 105 | Enviar bitacora | 2015-07-08 08:00 → 2015-07-09 08:00 (+1d) | 2015-07-08 12:00 → 2015-07-09 12:00 (+1d) |  |  | 5d → 0d |  | resources SEII - Mobile → Pier |
| 106 | Configurar google analytics | 2015-07-08 13:00 → 2015-07-09 13:00 (+1d) | 2015-07-08 17:00 → 2015-07-09 17:00 (+1d) |  |  | 5d → 0d |  | resources SEII - Mobile → Pier |
| 107 | Colocar url de google analytics en las acciones | 2015-07-09 08:00 → 2015-07-10 08:00 (+1d) | 2015-07-09 12:00 → 2015-07-10 12:00 (+1d) |  |  | 5d → 0d |  | resources SEII - Mobile → Pier |
| 108 | Pruebas desarrollador | 2015-07-09 13:00 → 2015-07-10 13:00 (+1d) | 2015-07-10 12:00 → 2015-07-13 12:00 (+3d) |  |  | 5d → 0d |  | resources SEII - Mobile → Pier |
| 109 | Revisión de pares | 2015-07-10 13:00 → 2015-07-13 13:00 (+3d) | 2015-07-10 17:00 → 2015-07-13 17:00 (+3d) |  |  | 5d → 0d |  | resources SEII - Mobile → Pier |
| 110 | **Web Services** |  | 2015-06-24 17:00 → 2015-07-01 12:00 (+7d) | 15.25d? → 18.75d | 21% → 37% | 5.5d → 0d |  |  |
| 111 | **Componentes Comunes** |  | 2015-06-11 12:00 → 2015-06-11 17:00 A | 5.75d? → 6.25d | 91% → 100% | 5.5d → none |  |  |
| 112 | Creación servicio web y estructura base (184) |  |  | 2d? → 2d |  |  |  | resources SEII - Web → Lennin |
| 113 | Implementación utilitarios base - parseo, conversión (186) |  |  | 1.75d? → 1.75d |  |  |  | resources SEII - Web → Lennin |
| 114 | EnviarBitacora (185) |  |  | 1d? → 1d |  |  |  | resources SEII - Web → Lennin |
| 115 | Log Errores |  | 2015-06-11 12:00 → 2015-06-11 17:00 A | 1d? → 1.5d | 50% → 100% | 5.5d → none |  | resources SEII - Web → Lennin |
| 116 | **Móvil** | 2015-06-11 13:00 → 2015-06-17 08:00 A (+6d) | 2015-06-16 17:00 → 2015-06-22 12:00 (+6d) |  | 0% → 57% | 5.75d → 0.25d | 111 → 50 |  |
| 117 | ObtenerColeccionesArchivos | 2015-06-11 13:00 → 2015-06-17 08:00 A (+6d) | 2015-06-15 12:00 → 2015-06-18 17:00 A (+3d) |  | 0% → 100% | 5.75d → none |  | resources SEII - Web → Lennin |
| 118 | Registrar Sesión | 2015-06-15 13:00 → 2015-06-19 08:00 (+4d) | 2015-06-16 12:00 → 2015-06-19 17:00 (+3d) |  |  | 5.75d → 0.25d |  | resources SEII - Web → Lennin |
| 119 | CerrarSesión | 2015-06-16 13:00 → 2015-06-22 08:00 (+6d) | 2015-06-16 17:00 → 2015-06-22 12:00 (+6d) |  |  | 5.75d → 0.25d |  | resources SEII - Web → Lennin |
| 120 | **Web** | 2015-06-11 13:00 → 2015-06-17 08:00 A (+6d) | 2015-06-24 17:00 → 2015-07-01 12:00 (+7d) |  | 0% → 7% | 5.5d → 0d |  |  |
| 121 | RegistrarSesion | 2015-06-17 08:00 → 2015-06-22 13:00 (+5d) | 2015-06-17 12:00 → 2015-06-22 17:00 (+5d) |  |  | 5.75d → 0.25d |  | resources SEII - Web → Lennin |
| 122 | **EnviarNotificacionPush** | 2015-06-17 13:00 → 2015-06-23 08:00 (+6d) | 2015-06-22 15:00 → 2015-06-26 10:00 (+4d) |  |  | 5.75d → 0.25d |  |  |
| 123 | Implementar módulo de notificaciones | 2015-06-17 13:00 → 2015-06-23 08:00 (+6d) | 2015-06-18 12:00 → 2015-06-23 17:00 (+5d) |  |  | 5.75d → 0.25d |  | resources SEII - Web → Lennin |
| 124 | Android | 2015-06-18 13:00 → 2015-06-24 08:00 (+6d) | 2015-06-19 10:00 → 2015-06-24 15:00 (+5d) |  |  | 5.75d → 0.25d |  | resources SEII - Web → Lennin |
| 125 | iOS | 2015-06-19 10:00 → 2015-06-24 15:00 (+5d) | 2015-06-19 17:00 → 2015-06-25 12:00 (+6d) |  |  | 5.75d → 0.25d |  | resources SEII - Web → Lennin |
| 126 | Windows Phone | 2015-06-22 08:00 → 2015-06-25 13:00 (+3d) | 2015-06-22 15:00 → 2015-06-26 10:00 (+4d) |  |  | 5.75d → 0.25d |  | resources SEII - Web → Lennin |
| 127 | ListarRoles | 2015-06-22 15:00 → 2015-06-26 10:00 (+4d) | 2015-06-23 12:00 → 2015-06-26 17:00 (+3d) |  |  | 5.75d → 0.25d |  | resources SEII - Web → Lennin |
| 128 | ListarPaises | 2015-06-23 13:00 → 2015-06-30 08:00 (+7d) | 2015-06-24 10:00 → 2015-06-30 15:00 (+6d) |  |  | 5.75d → 0.25d |  | resources SEII - Web → Lennin |
| 129 | CerrarSesion | 2015-06-24 10:00 → 2015-06-30 15:00 (+6d) | 2015-06-24 15:00 → 2015-07-01 10:00 (+7d) |  |  | 5.75d → 0.25d |  | resources SEII - Web → Lennin |
| 130 | ListarUmbrales | 2015-06-11 13:00 → 2015-06-17 08:00 A (+6d) | 2015-06-11 17:00 → 2015-06-17 12:00 A (+6d) |  | 0% → 100% | 5.5d → none | 111 → 111, 50 | resources SEI - Web → Alex |
| 131 | ObtenerUmbral | 2015-06-12 08:00 → 2015-06-17 13:00 A (+5d) | 2015-06-12 12:00 → 2015-06-17 17:00 A (+5d) |  | 0% → 100% | 5.5d → none |  | resources SEI - Web → Alex |
| 132 | ActualizarUmbral | 2015-06-12 13:00 → 2015-06-18 08:00 (+6d) | 2015-06-12 17:00 → 2015-06-18 12:00 (+6d) |  |  | 5.5d → 0d |  | resources SEI - Web → Alex |
| 133 | ListarColecciones | 2015-06-15 08:00 → 2015-06-18 13:00 (+3d) | 2015-06-15 12:00 → 2015-06-18 17:00 (+3d) |  |  | 5.5d → 0d |  | resources SEI - Web → Alex |
| 134 | InsertarColeccion | 2015-06-15 13:00 → 2015-06-19 08:00 (+4d) | 2015-06-15 17:00 → 2015-06-19 12:00 (+4d) |  |  | 5.5d → 0d |  | resources SEI - Web → Alex |
| 135 | EliminarColeccion | 2015-06-16 08:00 → 2015-06-19 13:00 (+3d) | 2015-06-16 12:00 → 2015-06-19 17:00 (+3d) |  |  | 5.5d → 0d |  | resources SEI - Web → Alex |
| 136 | ObtenerColeccion | 2015-06-16 13:00 → 2015-06-22 08:00 (+6d) | 2015-06-16 17:00 → 2015-06-22 12:00 (+6d) |  |  | 5.5d → 0d |  | resources SEI - Web → Alex |
| 137 | ActualizarColeccion | 2015-06-17 08:00 → 2015-06-22 13:00 (+5d) | 2015-06-17 12:00 → 2015-06-22 17:00 (+5d) |  |  | 5.5d → 0d |  | resources SEI - Web → Alex |
| 138 | ListarArchivos | 2015-06-17 13:00 → 2015-06-23 08:00 (+6d) | 2015-06-17 17:00 → 2015-06-23 12:00 (+6d) |  |  | 5.5d → 0d |  | resources SEI - Web → Alex |
| 139 | InsertarArchivo | 2015-06-18 08:00 → 2015-06-23 13:00 (+5d) | 2015-06-19 12:00 → 2015-06-24 17:00 (+5d) |  |  | 5.5d → 0d |  | resources SEI - Web → Alex |
| 140 | EliminarArchivo | 2015-06-19 13:00 → 2015-06-25 08:00 (+6d) | 2015-06-22 17:00 → 2015-06-26 12:00 (+4d) |  |  | 5.5d → 0d |  | resources SEI - Web → Alex |
| 141 | ObtenerArchivo | 2015-06-23 08:00 → 2015-06-26 13:00 (+3d) | 2015-06-23 12:00 → 2015-06-26 17:00 (+3d) |  |  | 5.5d → 0d |  | resources SEI - Web → Alex |
| 142 | ActualizarArchivo | 2015-06-23 13:00 → 2015-06-30 08:00 (+7d) | 2015-06-23 17:00 → 2015-06-30 12:00 (+7d) |  |  | 5.5d → 0d |  | resources SEI - Web → Alex |
| 143 | ObtenerRutaOrigen | 2015-06-24 08:00 → 2015-06-30 13:00 (+6d) | 2015-06-24 12:00 → 2015-06-30 17:00 (+6d) |  |  | 5.5d → 0d |  | resources SEI - Web → Alex |
| 144 | MoverArchivo | 2015-06-24 13:00 → 2015-07-01 08:00 (+7d) | 2015-06-24 17:00 → 2015-07-01 12:00 (+7d) |  |  | 5.5d → 0d |  | resources SEI - Web → Alex |
| 145 | **Portal Web** | 2015-06-25 08:00 → 2015-07-01 10:00 (+6d) | 2015-07-08 12:00 → 2015-07-13 17:00 (+5d) | 8.5d? → 8.75d |  | 5.5d → 0d | 110 → none |  |
| 146 | **CUW-001: Iniciar sesión, CUW-007: Cerrar Sesión** | 2015-06-25 08:00 → 2015-07-01 13:00 (+6d) | 2015-06-26 17:00 → 2015-07-03 12:00 (+7d) | 2d? → 2d |  | 5.5d → 0d | none → 144 |  |
| 147 | Consumir servicio Yanbal | 2015-06-25 08:00 → 2015-07-01 13:00 (+6d) | 2015-06-25 15:00 → 2015-07-02 10:00 (+7d) |  |  | 5.5d → 0d |  | resources SEI - Web → Alex |
| 148 | Registrar sesión | 2015-06-25 15:00 → 2015-07-02 10:00 (+7d) | 2015-06-26 10:00 → 2015-07-02 15:00 (+6d) |  |  | 5.5d → 0d |  | resources SEI - Web → Alex |

| ID | Task | Start | Finish | Duration | Complete | Total float | Predecessors | Other |
| --- | --- | --- | --- | --- | --- | --- | --- | --- |
| 149 | Listar paises | 2015-06-26 10:00 → 2015-07-02 15:00 (+6d) | 2015-06-26 15:00 → 2015-07-03 10:00 (+7d) | 0.5d? → 0.5d |  | 5.5d → 0d |  | resources SEI - Web → Alex |
| 150 | Cerrar Sesión | 2015-06-26 15:00 → 2015-07-03 10:00 (+7d) | 2015-06-26 17:00 → 2015-07-03 12:00 (+7d) |  |  | 5.5d → 0d |  | resources SEI - Web → Alex |
| 151 | **CUW-002: Configurar tamaño de Carga y Descarga** | 2015-06-30 08:00 → 2015-07-03 13:00 (+3d) | 2015-07-01 12:00 → 2015-07-06 17:00 (+5d) |  |  | 5.5d → 0d |  |  |
| 152 | Listar Limites de Carga y Descarga | 2015-06-30 08:00 → 2015-07-03 13:00 (+3d) | 2015-06-30 15:00 → 2015-07-06 10:00 (+6d) |  |  | 5.5d → 0d |  | resources SEI - Web → Alex |
| 153 | Editar Limite Carga y Descarga | 2015-06-30 15:00 → 2015-07-06 10:00 (+6d) | 2015-07-01 12:00 → 2015-07-06 17:00 (+5d) |  |  | 5.5d → 0d |  | resources SEI - Web → Alex |
| 154 | **CUW-006 Enviar Notificaciones** | 2015-07-01 13:00 → 2015-07-07 08:00 (+6d) | 2015-07-02 12:00 → 2015-07-07 17:00 (+5d) |  |  | 5.5d → 0d |  |  |
| 155 | Indicador de publicaciones pendientes | 2015-07-01 13:00 → 2015-07-07 08:00 (+6d) | 2015-07-01 17:00 → 2015-07-07 12:00 (+6d) |  |  | 5.5d → 0d |  | resources SEI - Web → Alex |
| 156 | Validar mensaje | 2015-07-02 08:00 → 2015-07-07 13:00 (+5d) | 2015-07-02 10:00 → 2015-07-07 15:00 (+5d) |  |  | 5.5d → 0d |  | resources SEI - Web → Alex |
| 157 | Enviar notificación push | 2015-07-02 10:00 → 2015-07-07 15:00 (+5d) | 2015-07-02 12:00 → 2015-07-07 17:00 (+5d) |  |  | 5.5d → 0d |  | resources SEI - Web → Alex |
| 158 | **CUW-005 Mover Archivos** | 2015-07-02 13:00 → 2015-07-08 08:00 (+6d) | 2015-07-06 17:00 → 2015-07-10 12:00 (+4d) |  |  | 5.5d → 0d |  |  |
| 159 | Listar Coleccion | 2015-07-02 13:00 → 2015-07-08 08:00 (+6d) | 2015-07-03 12:00 → 2015-07-08 17:00 (+5d) |  |  | 5.5d → 0d |  | resources SEI - Web → Alex |
| 160 | Mover Archivo | 2015-07-03 13:00 → 2015-07-09 08:00 (+6d) | 2015-07-06 17:00 → 2015-07-10 12:00 (+4d) |  |  | 5.5d → 0d |  | resources SEI - Web → Alex |
| 161 | **CUW-003: Gestionar Colecciones** | 2015-06-25 08:00 → 2015-07-01 10:00 (+6d) | 2015-06-30 17:00 → 2015-07-06 10:00 (+6d) |  |  | 5.5d → 0.25d | none → 129 |  |
| 162 | Listar Coleccion | 2015-06-25 08:00 → 2015-07-01 10:00 (+6d) | 2015-06-25 15:00 → 2015-07-01 17:00 (+6d) |  |  | 5.5d → 0.25d |  | resources SEII - Web → Lennin |
| 163 | Crear Coleccion | 2015-06-25 15:00 → 2015-07-02 08:00 (+7d) | 2015-06-26 12:00 → 2015-07-02 15:00 (+6d) |  |  | 5.5d → 0.25d |  | resources SEII - Web → Lennin |
| 164 | Editar Coleccion | 2015-06-26 13:00 → 2015-07-02 15:00 (+6d) | 2015-06-30 10:00 → 2015-07-03 12:00 (+3d) |  |  | 5.5d → 0.25d |  | resources SEII - Web → Lennin |
| 165 | Ver Coleccion | 2015-06-30 10:00 → 2015-07-03 13:00 (+3d) | 2015-06-30 15:00 → 2015-07-03 17:00 (+3d) |  |  | 5.5d → 0.25d |  | resources SEII - Web → Lennin |
| 166 | Eliminar Coleccion | 2015-06-30 15:00 → 2015-07-06 08:00 (+6d) | 2015-06-30 17:00 → 2015-07-06 10:00 (+6d) |  |  | 5.5d → 0.25d |  | resources SEII - Web → Lennin |
| 167 | **CUW-004: Gestionar Archivos** | 2015-07-01 08:00 → 2015-07-06 10:00 (+5d) | 2015-07-07 12:00 → 2015-07-10 15:00 (+3d) |  |  | 5.5d → 0.25d |  |  |
| 168 | Listar Archivo | 2015-07-01 08:00 → 2015-07-06 10:00 (+5d) | 2015-07-01 17:00 → 2015-07-07 10:00 (+6d) |  |  | 5.5d → 0.25d |  | resources SEII - Web → Lennin |
| 169 | Crear Archivo | 2015-07-02 08:00 → 2015-07-07 10:00 (+5d) | 2015-07-02 17:00 → 2015-07-08 10:00 (+6d) |  |  | 5.5d → 0.25d |  | resources SEII - Web → Lennin |
| 170 | Editar Archivo | 2015-07-03 08:00 → 2015-07-08 10:00 (+5d) | 2015-07-03 12:00 → 2015-07-08 15:00 (+5d) |  |  | 5.5d → 0.25d |  | resources SEII - Web → Lennin |
| 171 | Ver detalle Archivo | 2015-07-03 13:00 → 2015-07-08 15:00 (+5d) | 2015-07-03 17:00 → 2015-07-09 10:00 (+6d) |  |  | 5.5d → 0.25d |  | resources SEII - Web → Lennin |
| 172 | Listar Roles | 2015-07-06 08:00 → 2015-07-09 10:00 (+3d) | 2015-07-06 12:00 → 2015-07-09 15:00 (+3d) |  |  | 5.5d → 0.25d |  | resources SEII - Web → Lennin |
| 173 | Validar limite de Carga de archivo | 2015-07-06 13:00 → 2015-07-09 15:00 (+3d) | 2015-07-06 15:00 → 2015-07-09 17:00 (+3d) |  |  | 5.5d → 0.25d |  | resources SEII - Web → Lennin |
| 174 | Eliminar Archivo | 2015-07-06 15:00 → 2015-07-10 08:00 (+4d) | 2015-07-07 12:00 → 2015-07-10 15:00 (+3d) |  |  | 5.5d → 0.25d |  | resources SEII - Web → Lennin |
| 175 | Seguridad (SSL) | 2015-07-07 08:00 → 2015-07-10 13:00 (+3d) | 2015-07-07 12:00 → 2015-07-10 17:00 (+3d) | 0.5d? → 0.5d |  | 5.5d → 0d |  | resources SEI - Web → Alex |
| 176 | Pruebas de desarrollador | 2015-07-07 13:00 → 2015-07-13 08:00 (+6d) | 2015-07-07 17:00 → 2015-07-13 12:00 (+6d) |  |  | 5.5d → 0d |  | resources SEII - Web; SEI - Web → Lennin; Alex |
| 177 | Revisión de pares | 2015-07-08 08:00 → 2015-07-13 13:00 (+5d) | 2015-07-08 12:00 → 2015-07-13 17:00 (+5d) |  |  | 5.5d → 0d |  | resources SEII - Web; SEI - Web → Lennin; Alex |
| 178 | Pruebas integración | 2015-07-08 13:00 → 2015-07-14 08:00 (+6d) | 2015-07-09 12:00 → 2015-07-14 17:00 (+5d) | 1d? → 1d |  | 5.5d → 0d | 145 → 145, 74 | resources SEI - Web; SEII - Web → Alex; Lennin; Pier |
| 182 | **Aseguramiento de la calidad** | 2015-07-06 08:00 → 2015-05-18 08:00 A (-49d) | 2015-07-22 17:00 → 2015-07-27 12:00 (+5d) | 13d? → 49.5d? | 0% → 14% | 5d → 0d |  |  |
| 183 | **Planificación de Pruebas** |  | 2015-06-24 12:00 → 2015-07-03 17:00 (+9d) | 27.5d? → 34d? | 54% → 59% | 24.5d → 8d |  | was named Planificación y Especificación de Pruebas |
| 184 | LCP - Listado de Casos de Prueba (164) |  |  | 2d? → 2d |  |  |  | resources none → QAI - 1 |
| 185 | ECP - Especificación de Casos de Prueba (165) |  |  | 8d? → 8d |  |  |  |  |
| 186 | Plan de Pruebas Funcionales y de Rendimiento (163) | 2015-06-19 13:00 → 2015-06-08 08:00 A (-11d) | 2015-06-23 12:00 → 2015-06-11 17:00 (-12d) | 2d? → 4d | 0% → 75% | 24.5d → 12d | 188 → 259, 187 | constraint start no earlier than 2015-06-08 08:00 → none; resources QAII - 2 → Cecilia Garcia [50%] |
| 187 | Actualización de LCP (237) | 2015-06-10 08:00 A → 2015-06-12 08:00 A (+2d) | 2015-06-12 12:00 → 2015-06-18 17:00 (+6d) | 2.5d → 5d? | 40% → 80% | 24.5d → 8d | none → 186 | constraint start no earlier than 2015-06-10 08:00 → none; resources QAII - 2 → Cecilia Garcia [50%] |
| 188 | Actualización de ECP | 2015-06-12 13:00 → 2015-06-19 08:00 (+7d) | 2015-06-19 12:00 → 2015-07-03 17:00 (+14d) | 5d? → 10d? |  | 24.5d → 8d | 187 → 187, 186 | resources QAII - 2 → Cecilia Garcia [50%] |
| 190 | **Pruebas Funcionales** | 2015-07-13 08:00 → 2015-07-16 08:00 (+3d) | 2015-07-22 17:00 → 2015-07-23 17:00 (+1d) | 8d → 6d |  | 5d → 0d | 49 → none |  |
| 191 | **Móvil** | 2015-07-13 08:00 → 2015-07-16 08:00 (+3d) | 2015-07-22 17:00 → 2015-07-23 17:00 (+1d) | 8d → 6d |  | 5d → 0d |  |  |
| 192 | **Ejecución en Tablet** | 2015-07-13 08:00 → 2015-07-16 08:00 (+3d) | 2015-07-21 17:00 → 2015-07-23 17:00 (+2d) | 7d → 6d |  | 6d → 0d |  |  |
| 193 | Samsung de 10.1" /SO Android 4.1.2 (Principal) | 2015-07-13 08:00 → 2015-07-16 08:00 (+3d) | 2015-07-15 17:00 → 2015-07-23 17:00 (+8d) | 3d → 6d |  | 6d → 0d |  | was named Ejecución en Samsung de 10.1" /SO Android 4.1.2 (Principal); resources QAI - 1; Tester - 1 → QAI - 1 |
| 194 | Ipad SO 7 (Principal) | 2015-07-20 08:00 → 2015-07-16 08:00 (-4d) | 2015-07-20 17:00 → 2015-07-23 17:00 (+3d) | 1d → 6d |  | 6d → 0d | 196 → none | was named Ejecución en Ipad SO 7 (Secundario); resources QAI - 1; Tester - 1 → QAI - 2 |
| 195 | Lenovo 7" / SO Android 4.2.2 (Secundario) |  | 2015-07-16 17:00 → 2015-07-20 17:00 (+4d) | 1d → 3d |  | 6d → 0d | 193 → none | was named Ejecución en Lenovo 7" / SO Android 4.2.2 (Secundario); resources QAI - 1; Tester - 1 → Tester - 1 |
| 196 | AOC / SO: Android 4.1.1 (Secundario) | 2015-07-17 08:00 → 2015-07-16 08:00 (-1d) | 2015-07-17 17:00 → 2015-07-20 17:00 (+3d) | 1d → 3d |  | 6d → 0d | 195 → none | was named Tablet AOC / SO: Android 4.1.1 (Secundario); resources QAI - 1; Tester - 1 → Tester - 2 |
| 197 | Ipad SO 8 (Secundario) | 2015-07-21 08:00 → 2015-07-16 08:00 (-5d) | 2015-07-21 17:00 → 2015-07-20 17:00 (-1d) | 1d → 3d |  | 6d → 0d | 194 → none | was named Ejecución en Ipad SO 8 (Secundario); resources QAI - 1; Tester - 1 → Tester - 3 |
| 198 | **Ejecución en SmartPhone** | 2015-07-13 08:00 → 2015-07-16 08:00 (+3d) | 2015-07-22 17:00 → 2015-07-23 17:00 (+1d) | 8d → 6d |  | 5d → 0d |  |  |
| 199 | Nokia Lumia 520 / SO: Windows Phone 8.0 (Principal) | 2015-07-13 08:00 → 2015-07-16 08:00 (+3d) | 2015-07-15 17:00 → 2015-07-23 17:00 (+8d) | 3d → 6d |  | 5d → 0d |  | resources QAI - 2; Tester - 2 → QAI - 3 |
| 200 | Samsung Galaxy S III Mini / SO: Android 4.1.2 (Principal) | 2015-07-17 08:00 → 2015-07-16 08:00 (-1d) | 2015-07-17 17:00 → 2015-07-23 17:00 (+6d) | 1d → 6d |  | 5d → 0d | 202 → none | resources QAI - 2; Tester - 2 → QAI - 4 |
| 201 | Iphone 4 / iSO 7 (Principal) | 2015-07-20 08:00 → 2015-07-16 08:00 (-4d) | 2015-07-20 17:00 → 2015-07-23 17:00 (+3d) | 1d → 6d |  | 5d → 0d | 200 → none | was named Ejecución en Iphone 4 / iSO 7 (Principal); resources QAI - 2; Tester - 2 → QAI - 5 |
| 202 | Samsung Galaxy Chat/SO -SO Android 4.1.2 (Secundario) | 2015-07-16 08:00 → 2015-07-21 08:00 (+5d) | 2015-07-16 17:00 → 2015-07-23 17:00 (+7d) | 1d → 3d |  | 5d → 0d | 199 → 195 | was named Ejecución en Samsung Galaxy Chat/SO -SO Android 4.1.2 (secundario); resources QAI - 2; Tester - 2 → Tester - 1 |
| 203 | Iphone 5 / iSO 7 (Secundario) |  | 2015-07-21 17:00 → 2015-07-23 17:00 (+2d) | 1d → 3d |  | 5d → 0d | 201 → 196 | was named Ejecución en Iphone 5 / iSO 7 (Secundario); resources QAI - 2; Tester - 2 → Tester - 2 |
| 204 | Iphone 6 / iSO 7 (Secundario) | 2015-07-22 08:00 → 2015-07-21 08:00 (-1d) | 2015-07-22 17:00 → 2015-07-23 17:00 (+1d) | 1d → 3d |  | 5d → 0d | 203 → 197 | was named Ejecución en Iphone 6 / iSO 7 (Secundario); resources QAI - 2; Tester - 2 → Tester - 3 |
| 205 | **Web** | 2015-07-13 08:00 → 2015-07-16 08:00 (+3d) | 2015-07-17 17:00 → 2015-07-23 17:00 (+6d) | 5d → 6d |  | 8d → 0d |  |  |
| 206 | **Ejecución en Web Browser - IE9 (Principal)** | 2015-07-13 08:00 → 2015-07-16 08:00 (+3d) | 2015-07-16 15:00 → 2015-07-22 12:00 (+6d) | 3.75d → 4.5d |  | 8d → 0d |  |  |
| 207 | Ejecución de casos de prueba funcionales | 2015-07-13 08:00 → 2015-07-16 08:00 (+3d) | 2015-07-15 10:00 → 2015-07-20 17:00 (+5d) | 2.25d → 3d |  | 8d → 0d |  | resources QAI - 3; Tester - 3 → Tester - 6; Tester - 4 |
| 208 | Reporte de errores | 2015-07-15 10:00 → 2015-07-21 08:00 (+6d) | 2015-07-15 15:00 → 2015-07-21 12:00 (+6d) |  |  | 8d → 0d |  | resources QAI - 3; Tester - 3 → Tester - 6; Tester - 4 |
| 209 | Verificación de errores | 2015-07-15 15:00 → 2015-07-21 13:00 (+6d) | 2015-07-16 10:00 → 2015-07-21 17:00 (+5d) |  |  | 8d → 0d |  | resources QAI - 3; Tester - 3 → Tester - 6; Tester - 4 |
| 210 | Pruebas exploratoria | 2015-07-16 10:00 → 2015-07-22 08:00 (+6d) | 2015-07-16 15:00 → 2015-07-22 12:00 (+6d) |  |  | 8d → 0d |  | resources QAI - 3; Tester - 3 → Tester - 6; Tester - 4 |
| 211 | Ejecución en Web Browser - Chrome 40 (Secundario) | 2015-07-16 15:00 → 2015-07-22 13:00 (+6d) | 2015-07-17 17:00 → 2015-07-23 17:00 (+6d) | 1.25d → 1.5d |  | 8d → 0d |  | resources QAI - 3; Tester - 3 → Tester - 4; QAI - 6 |
| 223 | Web | 2015-07-30 08:00 → 2015-07-24 08:00 (-6d) | 2015-07-31 17:00 → 2015-07-27 12:00 (-4d) | 2d → 1.5d |  |  |  | resources SEII - Web → QAI - 3 |
| 224 | **Soporte de Pruebas / Bug Fixing** | 2015-07-13 08:00 → 2015-07-16 08:00 (+3d) | 2015-07-22 17:00 → 2015-07-27 12:00 (+5d) | 8d → 7.5d |  | 5d → 0d | none → 189SS | was named Soporte a Pruebas Funcionales (Resolución de Bugs) |
| 225 | Móvil | 2015-07-13 08:00 → 2015-07-16 08:00 (+3d) | 2015-07-22 17:00 → 2015-07-27 12:00 (+5d) | 8d → 7.5d |  | 5d → 0d | 191SS → none | resources SEII - Mobile [50%] → Pier |
| 226 | Web | 2015-07-13 08:00 → 2015-07-16 08:00 (+3d) | 2015-07-22 17:00 → 2015-07-27 12:00 (+5d) | 8d → 7.5d |  | 5d → 0d | 205SS → none | resources SEII - Web [50%] → Lennin |
| 227 | **Pruebas de Rendimiento** | 2015-07-06 08:00 → 2015-07-20 13:00 (+14d) | 2015-07-17 12:00 → 2015-08-03 17:00 (+17d) | 9.5d? → 8.5d |  | 8.5d → 1d |  |  |
| 228 | Análisis y Notas Iniciales | 2015-07-16 13:00 → 2015-07-20 13:00 (+4d) | 2015-07-16 17:00 → 2015-07-21 08:00 (+5d) | 0.5d? → 0.5d |  | 8.5d → 9d | 235 → 229SF | resources QAII → Ricardo Jauregui |
| 229 | Creación de Scripts (Flujo: 6WS) | 2015-07-06 08:00 → 2015-07-21 08:00 (+15d) | 2015-07-13 08:00 → 2015-07-27 13:00 (+14d) | 5d? → 4.5d |  | 13d → 4.5d |  | resources QAII → Ricardo Jauregui |
| 230 | **Ejecución de Pruebas** | 2015-07-13 08:00 → 2015-07-27 13:00 (+14d) | 2015-07-15 17:00 → 2015-07-31 17:00 (+16d) | 3d? → 2.5d |  | 8.5d → 1d | 49 → 182 |  |
| 231 | Preparación del Ambiente | 2015-07-13 08:00 → 2015-07-27 13:00 (+14d) | 2015-07-13 15:00 → 2015-07-30 11:00 (+17d) | 0.75d? → 0.88d |  | 8.5d → 1d |  | resources QAII → Ricardo Jauregui |
| 232 | Prueba de Ambiente | 2015-07-13 15:00 → 2015-07-30 11:00 (+17d) | 2015-07-13 17:00 → 2015-07-30 12:00 (+17d) | 0.25d? → 0.12d |  | 8.5d → 1d |  | resources QAII → Ricardo Jauregui |
| 233 | Ejecución prueba de carga | 2015-07-14 08:00 → 2015-07-30 13:00 (+16d) | 2015-07-15 17:00 → 2015-07-31 17:00 (+16d) | 2d? → 1.5d |  | 8.5d → 1.5d |  | resources QAII → Ricardo Jauregui |

| ID | Task | Start | Finish | Duration | Total float | Predecessors | Other |
| --- | --- | --- | --- | --- | --- | --- | --- |
| 234 | **Documentación** | 2015-07-16 08:00 → 2015-08-03 08:00 (+18d) | 2015-07-17 12:00 → 2015-08-03 17:00 (+17d) | 1.5d? → 1d | 8.5d → 1d |  |  |
| 235 | Parsing Logs | 2015-07-16 08:00 → 2015-08-03 08:00 (+18d) | 2015-07-16 12:00 → 2015-08-03 11:00 (+18d) | 0.5d? → 0.38d | 8.5d → 1.5d |  | resources QAII → Ricardo Jauregui |
| 236 | Creación de documento de resultados | 2015-07-17 08:00 → 2015-08-03 11:00 (+17d) | 2015-07-17 12:00 → 2015-08-03 17:00 (+17d) | 0.5d? → 0.62d | 8.5d → 1d | 228 → 235 | resources QAII → Ricardo Jauregui |
| 237 | **Documentación** | 2015-07-13 08:00 → 2015-07-16 08:00 (+3d) | 2015-07-24 17:00 → 2015-07-31 12:00 (+7d) | 10d → 9.5d |  | 224SS → 263 |  |
| 238 | **Web** | 2015-07-13 08:00 → 2015-07-16 08:00 (+3d) | 2015-07-24 17:00 → 2015-07-22 17:00 (-2d) | 10d → 5d | 0d → 2.5d |  |  |
| 239 | Manual de instalación | 2015-07-17 08:00 → 2015-07-16 08:00 (-1d) | 2015-07-22 17:00 → 2015-07-17 17:00 (-5d) | 4d → 2d | 0d → 2.5d | 240 → none | resources SEII - Web [50%] → Alex |
| 240 | Manual de soporte | 2015-07-14 08:00 → 2015-07-20 08:00 (+6d) | 2015-07-16 17:00 → 2015-07-20 17:00 (+4d) | 3d → 1d | 0d → 2.5d | 242 → 239 | resources SEII - Web [50%] → Alex |
| 241 | Manual de usuario | 2015-07-23 08:00 → 2015-07-21 08:00 (-2d) | 2015-07-24 17:00 → 2015-07-22 12:00 (-2d) | 2d → 1.5d | 0d → 2.5d | 239 → 240 | resources SEII - Web → Alex |
| 242 | Release notes | 2015-07-13 08:00 → 2015-07-22 13:00 (+9d) | 2015-07-13 17:00 → 2015-07-22 17:00 (+9d) | 1d → 0.5d | 0d → 2.5d | none → 241 | resources SEII - Web [50%] → Alex |
| 243 | **Móvil** | 2015-07-13 08:00 → 2015-07-16 08:00 (+3d) | 2015-07-24 17:00 → 2015-07-31 12:00 (+7d) | 10d → 9.5d |  |  |  |
| 244 | Guia de construcción | 2015-07-17 08:00 → 2015-07-27 13:00 (+10d) | 2015-07-22 17:00 → 2015-07-31 12:00 (+9d) | 4d → 2d |  | 245 → 182 | was named Manual de instalación; resources SEII - Mobile [50%] → Pier |
| 245 | Manual de soporte | 2015-07-14 08:00 → 2015-07-16 08:00 (+2d) |  | 3d → 1d | 0d → 8.5d | 247 → none | resources SEII - Mobile [50%] → none |
| 246 | Manual de usuario |  | 2015-07-24 17:00 → 2015-07-24 12:00 | 2d → 1.5d | 0d → 2.5d | 244 → 238 | resources SEII - Mobile → Alex |
| 247 | Release notes | 2015-07-13 08:00 → 2015-07-24 13:00 (+11d) | 2015-07-13 17:00 → 2015-07-24 17:00 (+11d) | 1d → 0.5d | 0d → 2.5d | none → 246 | resources SEII - Mobile [50%] → Alex |
| 248 | **Generación de Binarios** | 2015-07-27 08:00 → 2015-07-31 13:00 (+4d) | 2015-07-27 17:00 → 2015-08-03 12:00 (+7d) |  |  | none → 237, 182 |  |
| 249 | Portal Web / Web Services | 2015-07-27 08:00 → 2015-07-31 13:00 (+4d) | 2015-07-27 17:00 → 2015-08-03 12:00 (+7d) |  |  | 238 → none | resources SEII - Web → Lennin |
| 250 | Aplicaciones Moviles (iOS, Android, Windows Phone) | 2015-07-27 08:00 → 2015-07-31 13:00 (+4d) | 2015-07-27 17:00 → 2015-08-03 12:00 (+7d) |  |  | 243 → none | resources SEII - Mobile → Pier |
| 251 | **Despliegue Ambientes Certificación (QA) / UAT en Yanbal** | 2015-07-30 08:00 → 2015-08-03 13:00 (+4d) | 2015-07-31 17:00 → 2015-08-04 17:00 (+4d) | 2d → 1.5d |  | 248 → 248, 264 | was named Despliegue Ambientes Certificación Yanbal |
| 253 | Soporte Avantica | 2015-07-30 08:00 → 2015-08-03 13:00 (+4d) | 2015-07-31 17:00 → 2015-08-04 17:00 (+4d) | 2d → 1.5d |  | none → 252SS | was named Móvil; resources SEII - Mobile → Pier; Lennin |
| 260 | Fin Analisis |  | 2015-05-14 17:00 → 2015-05-14 08:00 | 1d? → 0d | 53d → 56d |  |  |
| 261 | Fin Diseño Técnico (20%) | 2015-06-09 08:00 → 2015-06-12 08:00 (+3d) | 2015-06-09 08:00 → 2015-06-12 08:00 (+3d) |  | 36d → 35d |  | was named Fin Diseño Tecnico; constraint start no earlier than 2015-06-09 08:00 → start no earlier than 2015-06-12 08:00 |
| 262 | Fin Diseño Gráfico (20%) |  |  |  | 46d → 48d |  | was named Fin Diseño Gráfico |
